# elaboration_project_plan

Schedule from MS Project, 2007-03-01 to 2007-11-12, A marks actual dates.
Duke University

## Calendars

- Standard: Mon-Fri 08:00-12:00, 13:00-17:00; Sat-Sun off.

## Resources

| Resource |
| --- |
| Patrick |
| Ram |
| Elaborators |
| PriyatamElaborators |
| Development team |
| Pri |
| Priyatam |
| Ramakrishna |
| Kruttik |
| Manav |
| Developers |
| Development teatm |
| BAH |
| Adopters |
| Pryatam |
| Kula |

## Schedule

| ID | WBS | Task | Type | Duration | Start | Finish | Predecessors | Complete | Remaining | Total slack | Constraint | Resources | Work | Actual work |
| --- | --- | --- | --- | --- | --- | --- | --- | --- | --- | --- | --- | --- | --- | --- |
| 1 | 1 | **Iteration 1 (eligibility, study personnel, registration management, multi-site study)** |  | 33d | 2007-03-01 A | 2007-04-16 |  | 59% | 13.37d | 149d |  |  | 21056h | 12808.6h |
| 2 | 1.1 | Iteration start | milestone | 0d | 2007-03-01 | 2007-03-01 |  |  |  | 0d | start no earlier than 2007-03-01 |  |  |  |
| 3 | 1.2 | **Project Management** |  | 30d | 2007-03-01 A | 2007-04-11 | 2 | 57% | 12.86d | 152d |  | Patrick; Adopters; BAH | 2640h | 1531.42h |
| 4 | 1.2.1 | **Draft project plan (task 1.1)** |  | 30d | 2007-03-01 A | 2007-04-11 |  | 67% | 10d | 152d |  | Patrick; Adopters; BAH | 960h | 640h |
| 5 | 1.2.1.1 | Developer draft |  | 5d | 2007-03-01 A | 2007-03-07 A |  | 100% |  |  |  | Patrick | 40h | 40h |
| 6 | 1.2.1.2 | BAH review |  | 5d | 2007-03-08 A | 2007-03-14 A | 5 | 100% |  |  |  | BAH | 40h | 40h |
| 7 | 1.2.1.3 | Developer update |  | 5d | 2007-03-15 A | 2007-03-21 A | 6 | 100% |  |  |  | Patrick | 40h | 40h |
| 8 | 1.2.1.4 | Adopter review |  | 3d | 2007-03-22 A | 2007-03-26 A | 7 | 100% |  |  |  | Adopters | 24h | 24h |
| 9 | 1.2.1.5 | Developer update |  | 2d | 2007-03-27 A | 2007-03-28 A | 8 | 100% |  |  |  | Patrick | 16h | 16h |
| 10 | 1.2.1.6 | Deliver project plan to BAH (task 1.1) | milestone | 0d | 2007-03-28 A | 2007-03-28 A | 9 | 100% |  |  |  | Patrick |  |  |
| 11 | 1.2.1.7 | BAH review project plan (task 1.1) |  | 10d | 2007-03-29 | 2007-04-11 | 10 |  |  | 145d |  | BAH | 80h |  |
| 12 | 1.2.2 | **Update risk matrix (task 1.4.1)** |  | 20d | 2007-03-01 A | 2007-03-28 |  | 50% | 10d | 162d |  | Patrick; BAH | 480h | 240h |
| 13 | 1.2.2.1 | Update risk matrix for week 1 |  | 5d | 2007-03-01 A | 2007-03-07 A |  | 100% |  |  |  | Patrick | 40h | 40h |
| 14 | 1.2.2.2 | Update risk matrix for week 2 |  | 5d | 2007-03-08 A | 2007-03-14 A | 13 | 100% |  |  |  | Patrick | 40h | 40h |
| 15 | 1.2.2.3 | Deliver risk matrix to BAH (task 1.4.1) | milestone | 0d | 2007-03-14 A | 2007-03-14 A | 14 | 100% |  |  |  | Patrick |  |  |
| 16 | 1.2.2.4 | BAH review risk matrix (task 1.4.1) |  | 10d | 2007-03-15 | 2007-03-28 | 15 |  |  | 162d |  | BAH | 80h |  |
| 17 | 1.2.3 | **Monthly report (task 1.3.1)** |  | 20d | 2007-03-15 A | 2007-04-11 | 15 | 50% | 10d | 152d |  | Patrick; BAH | 480h | 240h |
| 18 | 1.2.3.1 | Update risk matrix for week 3 |  | 5d | 2007-03-15 A | 2007-03-21 A |  | 100% |  |  |  | Patrick | 40h | 40h |
| 19 | 1.2.3.2 | Update risk matrix for week 4 |  | 5d | 2007-03-22 A | 2007-03-28 A | 18 | 100% |  |  |  | Patrick | 40h | 40h |
| 20 | 1.2.3.3 | Deliver monthly report and risk matrix to BAH (task 1.3.1) | milestone | 0d | 2007-03-28 A | 2007-03-28 A | 19 | 100% |  |  |  | Patrick |  |  |
| 21 | 1.2.3.4 | BAH review monthly report and risk matrix (task 1.3.1) |  | 10d | 2007-03-29 | 2007-04-11 | 20 |  |  | 152d |  | BAH | 80h |  |
| 22 | 1.3 | **Requirements and use cases** |  | 32d | 2007-03-01 A | 2007-04-13 | 2 | 38% | 19.93d | 150d |  | Developers; Adopters; BAH | 4048h | 1711.43h |
| 23 | 1.3.1 | **Create level 1 use cases and requirements** |  | 4d | 2007-03-01 A | 2007-03-06 |  | 83% | 0.67d | 0d |  | Developers | 288h | 250.67h |
| 24 | 1.3.1.1 | **Level 1 use cases for eligibility** |  | 2d | 2007-03-01 A | 2007-03-02 A |  | 100% |  |  |  | Kruttik; Priyatam | 64h | 64h |
| 25 | 1.3.1.1.1 | Use case document (task 3.1.1) |  | 1d | 2007-03-01 A | 2007-03-01 A |  | 100% |  |  |  | Kruttik; Priyatam | 16h | 16h |
| 26 | 1.3.1.1.2 | Requirements document (3.2.1) |  | 1d | 2007-03-02 A | 2007-03-02 A | 25 | 100% |  |  |  | Kruttik; Priyatam | 16h | 16h |

| ID | WBS | Task | Duration | Start | Finish | Predecessors | Complete | Remaining | Total slack | Free slack | Resources | Work | Actual work |
| --- | --- | --- | --- | --- | --- | --- | --- | --- | --- | --- | --- | --- | --- |
| 27 | 1.3.1.2 | **Level 1 use cases for study personnel** | 2d | 2007-03-01 A | 2007-03-02 A |  | 100% |  |  |  | Priyatam; Kula | 64h | 64h |
| 28 | 1.3.1.2.1 | Use case document (task 3.1.1) | 1d | 2007-03-01 A | 2007-03-01 A |  | 100% |  |  |  | Priyatam; Kula | 16h | 16h |
| 29 | 1.3.1.2.2 | Requirements document (3.2.1) | 1d | 2007-03-02 A | 2007-03-02 A | 28 | 100% |  |  |  | Priyatam; Kula | 16h | 16h |
| 30 | 1.3.1.3 | **Level 1 use cases for registration management** | 2d | 2007-03-01 A | 2007-03-02 A |  | 100% |  |  |  | Ramakrishna | 32h | 32h |
| 31 | 1.3.1.3.1 | Use case document (task 3.1.1) | 1d | 2007-03-01 A | 2007-03-01 A |  | 100% |  |  |  | Ramakrishna | 8h | 8h |
| 32 | 1.3.1.3.2 | Requirements document (3.2.1) | 1d | 2007-03-02 A | 2007-03-02 A | 31 | 100% |  |  |  | Ramakrishna | 8h | 8h |
| 33 | 1.3.1.4 | **Level 1 use cases for multi-site study** | 4d | 2007-03-01 A | 2007-03-06 A |  | 100% |  |  |  | Manav | 64h | 64h |
| 34 | 1.3.1.4.1 | Use case document (task 3.1.1) | 2d | 2007-03-01 A | 2007-03-02 A |  | 100% |  |  |  | Manav | 16h | 16h |
| 35 | 1.3.1.4.2 | Requirements document (3.2.1) | 2d | 2007-03-05 A | 2007-03-06 A | 34 | 100% |  |  |  | Manav | 16h | 16h |
| 36 | 1.3.1.5 | **Level 1 use cases for C3D integration** | 2d | 2007-03-01 | 2007-03-02 |  |  |  | 2d |  | Manav | 32h |  |
| 37 | 1.3.1.5.1 | Use case document (task 3.1.1) | 1d | 2007-03-01 | 2007-03-01 |  |  |  | 2d | 0d | Manav | 8h |  |
| 38 | 1.3.1.5.2 | Requirements document (3.2.1) | 1d | 2007-03-02 | 2007-03-02 | 37 |  |  | 2d |  | Manav | 8h |  |
| 39 | 1.3.2 | **Update use case document (task 3.1.1, task 5.2.1)** | 9d | 2007-03-07 A | 2007-03-19 | 23 | 80% | 1.8d | 160d | 0d | Developers; Adopters | 1416h | 1171.2h |
| 40 | 1.3.2.1 | **Update eligibility use cases** | 9d | 2007-03-07 A | 2007-03-19 A |  | 100% |  |  |  | Kruttik; Adopters; Priyatam | 312h | 312h |
| 41 | 1.3.2.1.1 | Developer update | 2d | 2007-03-07 A | 2007-03-08 A |  | 100% |  |  |  | Kruttik; Priyatam | 32h | 32h |
| 42 | 1.3.2.1.2 | Adopter review | 5d | 2007-03-09 A | 2007-03-15 A | 41 | 100% |  |  |  | Adopters | 40h | 40h |
| 43 | 1.3.2.1.3 | Developer update | 1d | 2007-03-16 A | 2007-03-16 A | 42 | 100% |  |  |  | Kruttik; Priyatam | 16h | 16h |
| 44 | 1.3.2.1.4 | Adopter sign-off | 1d | 2007-03-19 A | 2007-03-19 A | 43 | 100% |  |  |  | Adopters | 8h | 8h |
| 45 | 1.3.2.2 | **Update study personnel use cases** | 9d | 2007-03-07 A | 2007-03-19 A |  | 100% |  |  |  | Priyatam; Adopters; Kula | 312h | 312h |
| 46 | 1.3.2.2.1 | Developer update | 2d | 2007-03-07 A | 2007-03-08 A |  | 100% |  |  |  | Priyatam; Kula | 32h | 32h |
| 47 | 1.3.2.2.2 | Adopter review | 5d | 2007-03-09 A | 2007-03-15 A | 46 | 100% |  |  |  | Adopters | 40h | 40h |
| 48 | 1.3.2.2.3 | Developer update | 1d | 2007-03-16 A | 2007-03-16 A | 47 | 100% |  |  |  | Priyatam; Kula | 16h | 16h |
| 49 | 1.3.2.2.4 | Adopter sign-off | 1d | 2007-03-19 A | 2007-03-19 A | 48 | 100% |  |  |  | Adopters | 8h | 8h |
| 50 | 1.3.2.3 | **Update registration management use cases** | 9d | 2007-03-07 A | 2007-03-19 A |  | 100% |  |  |  | Ramakrishna; Adopters | 216h | 216h |
| 51 | 1.3.2.3.1 | Developer update | 2d | 2007-03-07 A | 2007-03-08 A |  | 100% |  |  |  | Ramakrishna | 16h | 16h |
| 52 | 1.3.2.3.2 | Adopter review | 5d | 2007-03-09 A | 2007-03-15 A | 51 | 100% |  |  |  | Adopters | 40h | 40h |
| 53 | 1.3.2.3.3 | Developer update | 1d | 2007-03-16 A | 2007-03-16 A | 52 | 100% |  |  |  | Ramakrishna | 8h | 8h |
| 54 | 1.3.2.3.4 | Adopter sign-off | 1d | 2007-03-19 A | 2007-03-19 A | 53 | 100% |  |  |  | Adopters | 8h | 8h |

| ID | WBS | Task | Duration | Start | Finish | Predecessors | Complete | Total slack | Free slack | Resources | Work | Actual work |
| --- | --- | --- | --- | --- | --- | --- | --- | --- | --- | --- | --- | --- |
| 55 | 1.3.2.4 | **Update multi-site trial use cases** | 9d | 2007-03-07 A | 2007-03-19 A |  | 100% |  |  | Manav; Adopters | 216h | 216h |
| 56 | 1.3.2.4.1 | Developer update | 2d | 2007-03-07 A | 2007-03-08 A |  | 100% |  |  | Manav | 16h | 16h |
| 57 | 1.3.2.4.2 | Adopter review | 5d | 2007-03-09 A | 2007-03-15 A | 56 | 100% |  |  | Adopters | 40h | 40h |
| 58 | 1.3.2.4.3 | Developer update | 1d | 2007-03-16 A | 2007-03-16 A | 57 | 100% |  |  | Manav | 8h | 8h |
| 59 | 1.3.2.4.4 | Adopter sign-off | 1d | 2007-03-19 A | 2007-03-19 A | 58 | 100% |  |  | Adopters | 8h | 8h |
| 60 | 1.3.2.5 | **Update C3D integration use cases** | 9d | 2007-03-07 | 2007-03-19 |  |  | 160d |  | Manav; Adopters | 216h |  |
| 61 | 1.3.2.5.1 | Developer update | 2d | 2007-03-07 | 2007-03-08 |  |  | 120d | 0d | Manav | 16h |  |
| 62 | 1.3.2.5.2 | Adopter review | 5d | 2007-03-09 | 2007-03-15 | 61 |  | 120d | 0d | Adopters | 40h |  |
| 63 | 1.3.2.5.3 | Developer update | 1d | 2007-03-16 | 2007-03-16 | 62 |  | 120d | 0d | Manav | 8h |  |
| 64 | 1.3.2.5.4 | Adopter sign-off | 1d | 2007-03-19 | 2007-03-19 | 63 |  | 120d |  | Adopters | 8h |  |
| 65 | 1.3.3 | **Update requirements document (task 3.2.1, task 5.3.1)** | 9d | 2007-03-20 | 2007-03-30 | 39 |  | 160d |  | Developers; Adopters | 1416h |  |
| 66 | 1.3.3.1 | **Update eligibility requirements** | 9d | 2007-03-20 | 2007-03-30 |  |  | 160d |  | Kruttik; Priyatam; Adopters | 312h |  |
| 67 | 1.3.3.1.1 | Developer update | 2d | 2007-03-20 | 2007-03-21 |  |  | 120d | 0d | Kruttik; Priyatam | 32h |  |
| 68 | 1.3.3.1.2 | Adopter review | 5d | 2007-03-22 | 2007-03-28 | 67 |  | 120d | 0d | Adopters | 40h |  |
| 69 | 1.3.3.1.3 | Developer update | 1d | 2007-03-29 | 2007-03-29 | 68 |  | 120d | 0d | Kruttik; Priyatam | 16h |  |
| 70 | 1.3.3.1.4 | Adopter sign-off | 1d | 2007-03-30 | 2007-03-30 | 69 |  | 120d |  | Adopters | 8h |  |
| 71 | 1.3.3.2 | **Update study personel requirements** | 9d | 2007-03-20 | 2007-03-30 |  |  | 160d |  | Priyatam; Adopters; Kula | 312h |  |
| 72 | 1.3.3.2.1 | Developer update | 2d | 2007-03-20 | 2007-03-21 |  |  | 120d | 0d | Priyatam; Kula | 32h |  |
| 73 | 1.3.3.2.2 | Adopter review | 5d | 2007-03-22 | 2007-03-28 | 72 |  | 120d | 0d | Adopters | 40h |  |
| 74 | 1.3.3.2.3 | Developer update | 1d | 2007-03-29 | 2007-03-29 | 73 |  | 120d | 0d | Priyatam; Kula | 16h |  |
| 75 | 1.3.3.2.4 | Adopter sign-off | 1d | 2007-03-30 | 2007-03-30 | 74 |  | 120d |  | Adopters | 8h |  |
| 76 | 1.3.3.3 | **Update registration management requirements** | 9d | 2007-03-20 | 2007-03-30 |  |  | 160d |  | Ramakrishna; Adopters | 216h |  |
| 77 | 1.3.3.3.1 | Developer update | 2d | 2007-03-20 | 2007-03-21 |  |  | 120d | 0d | Ramakrishna | 16h |  |
| 78 | 1.3.3.3.2 | Adopter review | 5d | 2007-03-22 | 2007-03-28 | 77 |  | 120d | 0d | Adopters | 40h |  |
| 79 | 1.3.3.3.3 | Developer update | 1d | 2007-03-29 | 2007-03-29 | 78 |  | 120d | 0d | Ramakrishna | 8h |  |
| 80 | 1.3.3.3.4 | Adopter sign-off | 1d | 2007-03-30 | 2007-03-30 | 79 |  | 120d |  | Adopters | 8h |  |

| ID | WBS | Task | Type | Duration | Start | Finish | Predecessors | Complete | Remaining | Total slack | Free slack | Resources | Work | Actual work |
| --- | --- | --- | --- | --- | --- | --- | --- | --- | --- | --- | --- | --- | --- | --- |
| 81 | 1.3.3.4 | **Update multi-site trial requirements** |  | 9d | 2007-03-20 | 2007-03-30 |  |  |  | 160d |  | Manav; Adopters | 216h |  |
| 82 | 1.3.3.4.1 | Developer update |  | 2d | 2007-03-20 | 2007-03-21 |  |  |  | 120d | 0d | Manav | 16h |  |
| 83 | 1.3.3.4.2 | Adopter review |  | 5d | 2007-03-22 | 2007-03-28 | 82 |  |  | 120d | 0d | Adopters | 40h |  |
| 84 | 1.3.3.4.3 | Developer update |  | 1d | 2007-03-29 | 2007-03-29 | 83 |  |  | 120d | 0d | Manav | 8h |  |
| 85 | 1.3.3.4.4 | Adopter sign-off |  | 1d | 2007-03-30 | 2007-03-30 | 84 |  |  | 120d |  | Adopters | 8h |  |
| 86 | 1.3.3.5 | **Update C3D integration requirements** |  | 9d | 2007-03-20 | 2007-03-30 |  |  |  | 160d |  | Manav; Adopters | 216h |  |
| 87 | 1.3.3.5.1 | Developer update |  | 2d | 2007-03-20 | 2007-03-21 |  |  |  | 120d | 0d | Manav | 16h |  |
| 88 | 1.3.3.5.2 | Adopter review |  | 5d | 2007-03-22 | 2007-03-28 | 87 |  |  | 120d | 0d | Adopters | 40h |  |
| 89 | 1.3.3.5.3 | Developer update |  | 1d | 2007-03-29 | 2007-03-29 | 88 |  |  | 120d | 0d | Manav | 8h |  |
| 90 | 1.3.3.5.4 | Adopter sign-off |  | 1d | 2007-03-30 | 2007-03-30 | 89 |  |  | 120d |  | Adopters | 8h |  |
| 91 | 1.3.4 | Developer deliver use case document to BAH (task 3.1.1, task 5.2.1) | milestone | 0d | 2007-03-30 A | 2007-03-30 A | 65 | 100% |  |  |  | Patrick |  |  |
| 92 | 1.3.5 | BAH review use case document (task 3.1.1, task 5.2.1) |  | 10d | 2007-04-02 | 2007-04-13 | 91 |  |  | 150d |  | BAH | 80h |  |
| 93 | 1.3.6 | Developer deliver requirements document to BAH (task 3.2.1, task 5.3.1) | milestone | 0d | 2007-03-30 A | 2007-03-30 A | 65 | 100% |  |  |  | Patrick |  |  |
| 94 | 1.3.7 | BAH review requirements document (task 3.2.1, task 5.3.1) |  | 10d | 2007-04-02 | 2007-04-13 | 93 |  |  | 150d |  | BAH | 80h |  |
| 95 | 1.4 | **Analysis and Design** |  | 29d | 2007-03-07 A | 2007-04-16 | 23, 2 | 70% | 8.76d | 149d |  | Developers; Adopters; BAH | 4248h | 3193.74h |
| 96 | 1.4.1 | **Perform level 1 design** |  | 2d | 2007-03-07 A | 2007-03-08 A |  | 100% |  |  |  | Developers | 48h | 48h |
| 97 | 1.4.1.1 | Cursory BRIDG harmonization |  | 1d | 2007-03-07 A | 2007-03-07 A |  | 100% |  |  |  | Developers | 8h | 8h |
| 98 | 1.4.1.2 | Update implementation model |  | 1d | 2007-03-08 A | 2007-03-08 A | 97 | 100% |  |  |  | Developers | 8h | 8h |
| 99 | 1.4.1.3 | Cursory system design |  | 2d | 2007-03-07 A | 2007-03-08 A |  | 100% |  |  |  | Developers | 16h | 16h |
| 100 | 1.4.2 | **Modeling (task 3.3.1)** |  | 27d | 2007-03-09 A | 2007-04-16 | 96 | 80% | 5.4d | 149d |  | Developers; Adopters | 1104h | 937.6h |
| 101 | 1.4.2.1 | **Update model** |  | 6d | 2007-03-09 A | 2007-03-16 A |  | 100% |  |  |  | Developers | 264h | 264h |
| 102 | 1.4.2.1.1 | **BRIDG harmonization** |  | 3d | 2007-03-09 A | 2007-03-13 A | 96 | 100% |  |  |  |  | 96h | 96h |
| 103 | 1.4.2.1.1.1 | Harmonize Study model |  | 2d | 2007-03-09 A | 2007-03-12 A |  | 100% |  |  |  | Kruttik; Priyatam; Manav | 48h | 48h |
| 104 | 1.4.2.1.1.2 | Harmonize Personnel model |  | 3d | 2007-03-09 A | 2007-03-13 A |  | 100% |  |  |  | Ramakrishna | 24h | 24h |
| 105 | 1.4.2.1.1.3 | Harmonize Multi-site Study model |  | 3d | 2007-03-09 A | 2007-03-13 A |  | 100% |  |  |  | Manav | 24h | 24h |

| ID | WBS | Task | Type | Duration | Start | Finish | Predecessors | Complete | Remaining | Total slack | Resources | Work | Actual work |
| --- | --- | --- | --- | --- | --- | --- | --- | --- | --- | --- | --- | --- | --- |
| 106 | 1.4.2.1.2 | **Model implementation** |  | 3d | 2007-03-14 A | 2007-03-16 A | 102 | 100% |  |  |  | 120h | 120h |
| 107 | 1.4.2.1.2.1 | Implement Study model |  | 3d | 2007-03-14 A | 2007-03-16 A |  | 100% |  |  | Kruttik; Priyatam; Manav | 72h | 72h |
| 108 | 1.4.2.1.2.2 | Implement Personnel model |  | 3d | 2007-03-14 A | 2007-03-16 A |  | 100% |  |  | Ramakrishna | 24h | 24h |
| 109 | 1.4.2.1.2.3 | Implement Multi-site Study model |  | 3d | 2007-03-14 A | 2007-03-16 A |  | 100% |  |  | Manav | 24h | 24h |
| 110 | 1.4.2.2 | Adopter review |  | 5d | 2007-03-19 A | 2007-03-23 A | 101 | 100% |  |  | Adopters | 40h | 40h |
| 111 | 1.4.2.3 | **Update model** |  | 6d | 2007-03-26 A | 2007-04-02 A | 110 | 100% |  |  | Developers | 288h | 288h |
| 112 | 1.4.2.3.1 | **BRIDG harmonization** |  | 3d | 2007-03-26 A | 2007-03-28 A | 110 | 100% |  |  |  | 120h | 120h |
| 113 | 1.4.2.3.1.1 | Harmonize Study model |  | 3d | 2007-03-26 A | 2007-03-28 A |  | 100% |  |  | Kruttik; Priyatam; Manav | 72h | 72h |
| 114 | 1.4.2.3.1.2 | Harmonize Personnel model |  | 3d | 2007-03-26 A | 2007-03-28 A |  | 100% |  |  | Ramakrishna | 24h | 24h |
| 115 | 1.4.2.3.1.3 | Harmonize Multi-site Study model |  | 3d | 2007-03-26 A | 2007-03-28 A |  | 100% |  |  | Manav | 24h | 24h |
| 116 | 1.4.2.3.2 | **Model implementation** |  | 3d | 2007-03-29 A | 2007-04-02 A | 112 | 100% |  |  |  | 120h | 120h |
| 117 | 1.4.2.3.2.1 | Implement Study model |  | 3d | 2007-03-29 A | 2007-04-02 A |  | 100% |  |  | Kruttik; Priyatam; Manav | 72h | 72h |
| 118 | 1.4.2.3.2.2 | Implement Personnel model |  | 3d | 2007-03-29 A | 2007-04-02 A |  | 100% |  |  | Ramakrishna | 24h | 24h |
| 119 | 1.4.2.3.2.3 | Implement Multi-site Study model |  | 3d | 2007-03-29 A | 2007-04-02 A |  | 100% |  |  | Manav | 24h | 24h |
| 120 | 1.4.2.4 | Developer deliver UML to BAH (task 3.3.1) | milestone | 0d | 2007-04-02 A | 2007-04-02 A | 111 | 100% |  |  | Patrick |  |  |
| 121 | 1.4.2.5 | BAH review of UML (task 3.3.1) |  | 10d | 2007-04-03 | 2007-04-16 | 120 |  |  | 149d | BAH | 80h |  |
| 122 | 1.4.3 | **System design (task 3.4.1)** |  | 25d | 2007-03-09 A | 2007-04-12 | 96 | 71% | 7.35d | 151d | Developers; BAH | 2160h | 1722.35h |
| 123 | 1.4.3.1 | **Design eligibility** |  | 15d | 2007-03-09 A | 2007-03-29 A |  | 100% |  |  | Kruttik; Priyatam | 480h | 480h |
| 124 | 1.4.3.1.1 | Draft UML |  | 5d | 2007-03-09 A | 2007-03-15 A |  | 100% |  |  | Kruttik; Priyatam | 80h | 80h |
| 125 | 1.4.3.1.2 | Team review |  | 5d | 2007-03-16 A | 2007-03-22 A | 124 | 100% |  |  | Kruttik; Priyatam | 80h | 80h |
| 126 | 1.4.3.1.3 | Update design document |  | 5d | 2007-03-23 A | 2007-03-29 A | 125 | 100% |  |  | Kruttik; Priyatam | 80h | 80h |
| 127 | 1.4.3.2 | **Design personnel** |  | 15d | 2007-03-09 A | 2007-03-29 A |  | 100% |  |  | Priyatam; Kula | 480h | 480h |
| 128 | 1.4.3.2.1 | Draft UML |  | 5d | 2007-03-09 A | 2007-03-15 A |  | 100% |  |  | Priyatam; Kula | 80h | 80h |
| 129 | 1.4.3.2.2 | Team review |  | 5d | 2007-03-16 A | 2007-03-22 A | 128 | 100% |  |  | Priyatam; Kula | 80h | 80h |
| 130 | 1.4.3.2.3 | Update design document |  | 5d | 2007-03-23 A | 2007-03-29 A | 129 | 100% |  |  | Priyatam; Kula | 80h | 80h |

| ID | WBS | Task | Type | Duration | Start | Finish | Predecessors | Complete | Remaining | Total slack | Free slack | Resources | Work | Actual work |
| --- | --- | --- | --- | --- | --- | --- | --- | --- | --- | --- | --- | --- | --- | --- |
| 131 | 1.4.3.3 | **Design registration management** |  | 15d | 2007-03-09 A | 2007-03-29 A |  | 100% |  |  |  | Ramakrishna | 240h | 240h |
| 132 | 1.4.3.3.1 | Draft UML |  | 5d | 2007-03-09 A | 2007-03-15 A |  | 100% |  |  |  | Ramakrishna | 40h | 40h |
| 133 | 1.4.3.3.2 | Team review |  | 5d | 2007-03-16 A | 2007-03-22 A | 132 | 100% |  |  |  | Ramakrishna | 40h | 40h |
| 134 | 1.4.3.3.3 | Update design document |  | 5d | 2007-03-23 A | 2007-03-29 A | 133 | 100% |  |  |  | Ramakrishna | 40h | 40h |
| 135 | 1.4.3.4 | **Design multi-site study** |  | 15d | 2007-03-09 A | 2007-03-29 A |  | 100% |  |  |  | Manav | 240h | 240h |
| 136 | 1.4.3.4.1 | Draft UML |  | 5d | 2007-03-09 A | 2007-03-15 A |  | 100% |  |  |  | Manav | 40h | 40h |
| 137 | 1.4.3.4.2 | Team review |  | 5d | 2007-03-16 A | 2007-03-22 A | 136 | 100% |  |  |  | Manav | 40h | 40h |
| 138 | 1.4.3.4.3 | Update design document |  | 5d | 2007-03-23 A | 2007-03-29 A | 137 | 100% |  |  |  | Manav | 40h | 40h |
| 139 | 1.4.3.5 | **Design C3D integration** |  | 15d | 2007-03-09 | 2007-03-29 |  |  |  | 151d | 0d | Manav | 240h |  |
| 140 | 1.4.3.5.1 | Draft UML |  | 5d | 2007-03-09 | 2007-03-15 |  |  |  | 144d | 0d | Manav | 40h |  |
| 141 | 1.4.3.5.2 | Team review |  | 5d | 2007-03-16 | 2007-03-22 | 140 |  |  | 144d | 0d | Manav | 40h |  |
| 142 | 1.4.3.5.3 | Update design document |  | 5d | 2007-03-23 | 2007-03-29 | 141 |  |  | 144d |  | Manav | 40h |  |
| 143 | 1.4.3.6 | Deliver design doc to BAH (task 3.4.1) | milestone | 0d | 2007-03-29 | 2007-03-29 | 139 |  |  | 151d | 0d | Patrick |  |  |
| 144 | 1.4.3.7 | BAH review design doc (task 3.4.1) |  | 10d | 2007-03-30 | 2007-04-12 | 143 |  |  | 151d |  | BAH | 80h |  |
| 145 | 1.4.4 | **Research** |  | 10d | 2007-03-09 | 2007-03-22 | 96 |  |  | 166d |  | Manav | 240h |  |
| 146 | 1.4.4.1 | **Investigate C3D integration** |  | 10d | 2007-03-09 | 2007-03-22 | 96 |  |  | 166d |  | Manav | 160h |  |
| 147 | 1.4.4.1.1 | Review release 1 code |  | 5d | 2007-03-09 | 2007-03-15 |  |  |  | 166d | 0d | Manav | 40h |  |
| 148 | 1.4.4.1.2 | Review release 1 security model |  | 5d | 2007-03-16 | 2007-03-22 | 147 |  |  | 166d |  | Manav | 40h |  |
| 149 | 1.5 | **Implementation (task 3.5.1)** |  | 25d | 2007-03-09 A | 2007-04-12 | 96, 2 | 72% | 7d | 151d |  | Developers; BAH | 2984h | 2436h |
| 150 | 1.5.1 | **Database layer** |  | 6d | 2007-03-09 A | 2007-03-16 A |  | 100% |  |  |  | Developers | 432h | 432h |
| 151 | 1.5.1.1 | **Eligibility model** |  | 4d | 2007-03-09 A | 2007-03-14 A |  | 100% |  |  |  | Kruttik; Priyatam | 112h | 112h |
| 152 | 1.5.1.1.1 | Create DDLs |  | 1d | 2007-03-09 A | 2007-03-09 A |  | 100% |  |  |  | Kruttik; Priyatam | 16h | 16h |
| 153 | 1.5.1.1.2 | Apply to database |  | 1d | 2007-03-12 A | 2007-03-12 A | 152 | 100% |  |  |  | Kruttik; Priyatam | 16h | 16h |
| 154 | 1.5.1.1.3 | Create test data |  | 1d | 2007-03-13 A | 2007-03-13 A | 153 | 100% |  |  |  | Kruttik; Priyatam | 16h | 16h |
| 155 | 1.5.1.1.4 | Create data access objects (DAOs) |  | 1d | 2007-03-14 A | 2007-03-14 A | 154 | 100% |  |  |  |  |  |  |

| ID | WBS | Task | Duration | Start | Finish | Predecessors | Complete | Remaining | Total slack | Resources | Work | Actual work |
| --- | --- | --- | --- | --- | --- | --- | --- | --- | --- | --- | --- | --- |
| 156 | 1.5.1.2 | **Study personnel** | 6d | 2007-03-09 A | 2007-03-16 A |  | 100% |  |  | Priyatam; Kula | 176h | 176h |
| 157 | 1.5.1.2.1 | Investigate how to implement Person with Role | 2d | 2007-03-09 A | 2007-03-12 A |  | 100% |  |  | Priyatam; Kula | 32h | 32h |
| 158 | 1.5.1.2.2 | Create DDLs | 1d | 2007-03-13 A | 2007-03-13 A | 157 | 100% |  |  | Priyatam; Kula | 16h | 16h |
| 159 | 1.5.1.2.3 | Apply to database | 1d | 2007-03-14 A | 2007-03-14 A | 158 | 100% |  |  | Priyatam; Kula | 16h | 16h |
| 160 | 1.5.1.2.4 | Create test data | 1d | 2007-03-15 A | 2007-03-15 A | 159 | 100% |  |  | Priyatam; Kula | 16h | 16h |
| 161 | 1.5.1.2.5 | Create data access objects (DAOs) | 1d | 2007-03-16 A | 2007-03-16 A | 160 | 100% |  |  |  |  |  |
| 162 | 1.5.1.3 | **Multi-site** | 4d | 2007-03-09 A | 2007-03-14 A |  | 100% |  |  | Manav | 64h | 64h |
| 163 | 1.5.1.3.1 | Create DDLs | 1d | 2007-03-09 A | 2007-03-09 A |  | 100% |  |  | Manav | 8h | 8h |
| 164 | 1.5.1.3.2 | Apply to database | 1d | 2007-03-12 A | 2007-03-12 A | 163 | 100% |  |  | Manav | 8h | 8h |
| 165 | 1.5.1.3.3 | Create test data | 1d | 2007-03-13 A | 2007-03-13 A | 164 | 100% |  |  | Manav | 8h | 8h |
| 166 | 1.5.1.3.4 | Create data access objects (DAOs) | 1d | 2007-03-14 A | 2007-03-14 A | 165 | 100% |  |  | Manav | 8h | 8h |
| 167 | 1.5.1.4 | Unit testing | 4d | 2007-03-09 A | 2007-03-14 A |  | 100% |  |  | Developers | 32h | 32h |
| 168 | 1.5.2 | **Deployment** | 2d | 2007-03-15 A | 2007-03-16 A |  | 100% |  |  | Manav | 32h | 32h |
| 169 | 1.5.2.1 | Deploy a second C3PR for multi-site testing | 2d | 2007-03-15 A | 2007-03-16 A | 162 | 100% |  |  | Manav | 16h | 16h |
| 170 | 1.5.3 | **Business layer** | 12d | 2007-03-09 A | 2007-03-26 |  | 63% | 4.5d | 164d | Developers | 720h | 524h |
| 171 | 1.5.3.1 | **Implement eligibility APIs** | 7d | 2007-03-15 A | 2007-03-23 A | 151 | 100% |  |  | Kruttik; Priyatam | 224h | 224h |
| 172 | 1.5.3.1.1 | Design APIs | 2d | 2007-03-15 A | 2007-03-16 A |  | 100% |  |  | Kruttik; Priyatam | 32h | 32h |
| 173 | 1.5.3.1.2 | Implement APIs | 3d | 2007-03-19 A | 2007-03-21 A | 172 | 100% |  |  | Kruttik; Priyatam | 48h | 48h |
| 174 | 1.5.3.1.3 | Deploy APIs | 2d | 2007-03-22 A | 2007-03-23 A | 173 | 100% |  |  | Kruttik; Priyatam | 32h | 32h |
| 175 | 1.5.3.2 | **Implement study personnel APIs** | 6d | 2007-03-19 A | 2007-03-26 A | 156 | 100% |  |  | Ramakrishna | 96h | 96h |
| 176 | 1.5.3.2.1 | Design APIs | 2d | 2007-03-19 A | 2007-03-20 A |  | 100% |  |  | Ramakrishna | 16h | 16h |
| 177 | 1.5.3.2.2 | Implement APIs | 3d | 2007-03-21 A | 2007-03-23 A | 176 | 100% |  |  | Ramakrishna | 24h | 24h |
| 178 | 1.5.3.2.3 | Deploy APIs | 1d | 2007-03-26 A | 2007-03-26 A | 177 | 100% |  |  | Ramakrishna | 8h | 8h |
| 179 | 1.5.3.3 | **Implement C3PR registration APIs** | 6d | 2007-03-15 A | 2007-03-22 A | 162 | 100% |  |  | Manav | 96h | 96h |
| 180 | 1.5.3.3.1 | Design APIs | 2d | 2007-03-15 A | 2007-03-16 A |  | 100% |  |  | Manav | 16h | 16h |
| 181 | 1.5.3.3.2 | Implement APIs | 3d | 2007-03-19 A | 2007-03-21 A | 180 | 100% |  |  | Manav | 24h | 24h |
| 182 | 1.5.3.3.3 | Deploy APIs | 1d | 2007-03-22 A | 2007-03-22 A | 181 | 100% |  |  | Manav | 8h | 8h |

| ID | WBS | Task | Type | Duration | Start | Finish | Predecessors | Complete | Remaining | Total slack | Free slack | Resources | Work | Actual work |
| --- | --- | --- | --- | --- | --- | --- | --- | --- | --- | --- | --- | --- | --- | --- |
| 183 | 1.5.3.4 | **Business rules** |  | 5d | 2007-03-09 | 2007-03-15 |  |  |  | 171d |  | Ramakrishna | 160h |  |
| 184 | 1.5.3.4.1 | Duplicate registrations |  | 5d | 2007-03-09 | 2007-03-15 |  |  |  | 164d |  | Ramakrishna | 40h |  |
| 185 | 1.5.3.4.2 | Duplicate subjects |  | 5d | 2007-03-09 | 2007-03-15 |  |  |  | 141d |  | Ramakrishna | 40h |  |
| 186 | 1.5.3.4.3 | Duplicate studies |  | 5d | 2007-03-09 | 2007-03-15 |  |  |  | 141d |  | Ramakrishna | 40h |  |
| 187 | 1.5.3.5 | Unit testing |  | 6d | 2007-03-16 A | 2007-03-23 A | 184 | 100% |  |  |  | Developers | 48h | 48h |
| 188 | 1.5.4 | **ESB** |  | 5d | 2007-03-23 A | 2007-03-29 A | 179 | 100% |  |  |  | Manav | 120h | 120h |
| 189 | 1.5.4.1 | Implement inbound-binding component for C3PR registration |  | 5d | 2007-03-23 A | 2007-03-29 A |  | 100% |  |  |  | Manav | 40h | 40h |
| 190 | 1.5.4.2 | Unit testing |  | 5d | 2007-03-23 A | 2007-03-29 A |  | 100% |  |  |  | Developers | 40h | 40h |
| 191 | 1.5.5 | **Web interface** |  | 17d | 2007-03-09 A | 2007-04-02 A |  | 100% |  |  |  | Developers | 960h | 960h |
| 192 | 1.5.5.1 | **Modify study management interface** |  | 6d | 2007-03-23 A | 2007-03-30 A |  | 100% |  |  |  | Kruttik; Priyatam; Manav | 384h | 384h |
| 193 | 1.5.5.1.1 | Manage eligibility criteria |  | 5d | 2007-03-26 A | 2007-03-30 A | 171 | 100% |  |  |  | Kruttik; Priyatam; Manav | 120h | 120h |
| 194 | 1.5.5.1.2 | Manage multi-site study |  | 5d | 2007-03-23 A | 2007-03-29 A | 179 | 100% |  |  |  | Kruttik; Priyatam; Manav | 120h | 120h |
| 195 | 1.5.5.2 | **Modify study personnel management interface** |  | 5d | 2007-03-27 A | 2007-04-02 A |  | 100% |  |  |  | Priyatam; Kula | 160h | 160h |
| 196 | 1.5.5.2.1 | Manage study personnel |  | 5d | 2007-03-27 A | 2007-04-02 A | 175 | 100% |  |  |  | Priyatam; Kula | 80h | 80h |
| 197 | 1.5.5.3 | **Modify registration interface** |  | 5d | 2007-03-26 A | 2007-03-30 A |  | 100% |  |  |  | Kruttik; Priyatam | 160h | 160h |
| 198 | 1.5.5.3.1 | Check eligibility |  | 5d | 2007-03-26 A | 2007-03-30 A | 171 | 100% |  |  |  | Kruttik; Priyatam | 80h | 80h |
| 199 | 1.5.5.4 | **Modify registration management interface** |  | 5d | 2007-03-09 A | 2007-03-15 A |  | 100% |  |  |  | Ramakrishna | 80h | 80h |
| 200 | 1.5.5.4.1 | Manage study subject registration |  | 5d | 2007-03-09 A | 2007-03-15 A |  | 100% |  |  |  | Ramakrishna | 40h | 40h |
| 201 | 1.5.5.5 | Unit testing |  | 5d | 2007-03-09 A | 2007-03-15 A |  | 100% |  |  |  | Developers | 40h | 40h |
| 202 | 1.5.6 | **Installer** |  | 15d | 2007-03-09 A | 2007-03-29 |  | 33% | 10d | 161d |  | Kruttik | 240h | 80h |
| 203 | 1.5.6.1 | Externalize properties |  | 5d | 2007-03-09 A | 2007-03-15 A |  | 100% |  |  |  | Kruttik | 40h | 40h |
| 204 | 1.5.6.2 | Apply DDLs via ant |  | 5d | 2007-03-16 | 2007-03-22 | 203 |  |  | 131d | 0d | Kruttik | 40h |  |
| 205 | 1.5.6.3 | Make WAR file |  | 5d | 2007-03-23 | 2007-03-29 | 204 |  |  | 131d |  | Kruttik | 40h |  |
| 206 | 1.5.7 | Deliver codebase to BAH (task 3.5.1) | milestone | 0d | 2007-03-29 A | 2007-03-29 A | 150, 188, 168 | 100% |  |  |  | Patrick |  |  |
| 207 | 1.5.8 | BAH review codebase (task 3.5.1) |  | 10d | 2007-03-30 | 2007-04-12 | 206 |  |  | 144d |  | BAH | 80h |  |

| ID | WBS | Task | Type | Duration | Start | Finish | Predecessors | Complete | Remaining | Total slack | Resources | Work | Actual work |
| --- | --- | --- | --- | --- | --- | --- | --- | --- | --- | --- | --- | --- | --- |
| 208 | 1.6 | **Testing** |  | 30d | 2007-03-01 A | 2007-04-11 | 2 | 57% | 12.86d | 152d | Developers; Adopters; BAH | 4952h | 2978.63h |
| 209 | 1.6.1 | **Developer testing** |  | 30d | 2007-03-01 A | 2007-04-11 |  | 57% | 13.04d | 152d | BAH; Adopters; Developers | 1968h | 1154.95h |
| 210 | 1.6.1.1 | **Update developer test plan (task 3.6.1, task 5.4.1)** |  | 30d | 2007-03-01 A | 2007-04-11 |  | 67% | 10d | 152d | Developers; Adopters; BAH | 960h | 640h |
| 211 | 1.6.1.1.1 | Developer draft |  | 5d | 2007-03-01 A | 2007-03-07 A |  | 100% |  |  | Developers | 40h | 40h |
| 212 | 1.6.1.1.2 | Adopter review |  | 5d | 2007-03-08 A | 2007-03-14 A | 211 | 100% |  |  | Adopters | 40h | 40h |
| 213 | 1.6.1.1.3 | Developer update |  | 5d | 2007-03-15 A | 2007-03-21 A | 212 | 100% |  |  | Developers | 40h | 40h |
| 214 | 1.6.1.1.4 | Adopter review and sign |  | 5d | 2007-03-22 A | 2007-03-28 A | 213 | 100% |  |  | Adopters | 40h | 40h |
| 215 | 1.6.1.1.5 | Deliver signed test plan to BAH (task 3.6.1, task 5.4.1) | milestone | 0d | 2007-03-28 A | 2007-03-28 A | 214 | 100% |  |  | Patrick |  |  |
| 216 | 1.6.1.1.6 | BAH review signed test plan (task 3.6.1, task 5.4.1) |  | 10d | 2007-03-29 | 2007-04-11 | 215 |  |  | 152d | BAH | 80h |  |
| 217 | 1.6.1.2 | **Integration and system testing (task 3.8.1)** |  | 10d | 2007-03-23 A | 2007-04-05 | 211, 206FS-5d | 38% | 6.25d | 156d | Developers; BAH | 288h | 108h |
| 218 | 1.6.1.2.1 | Generate test data |  | 1d | 2007-03-23 A | 2007-03-23 A |  | 100% |  |  | Developers | 8h | 8h |
| 219 | 1.6.1.2.2 | Write tests |  | 3d | 2007-03-23 A | 2007-03-27 A |  | 100% |  |  | Developers | 24h | 24h |
| 220 | 1.6.1.2.3 | Validate tests |  | 1d | 2007-03-28 A | 2007-03-28 A | 219 | 100% |  |  | Developers | 8h | 8h |
| 221 | 1.6.1.2.4 | Generate test report |  | 1d | 2007-03-29 A | 2007-03-29 A | 220 | 100% |  |  | Developers | 8h | 8h |
| 222 | 1.6.1.2.5 | Deliver test report to BAH (task 3.8.1) | milestone | 0d | 2007-03-23 A | 2007-03-23 A |  | 100% |  |  | Patrick |  |  |
| 223 | 1.6.1.2.6 | BAH review test report (task 3.8.1) |  | 10d | 2007-03-23 | 2007-04-05 |  |  |  | 156d | BAH | 80h |  |
| 224 | 1.6.2 | **Adopter testing** |  | 30d | 2007-03-01 A | 2007-04-11 |  | 58% | 12.71d | 152d | Adopters; Developers; BAH | 2264h | 1412.25h |
| 225 | 1.6.2.1 | **Adopter deployment** |  | 5d | 2007-03-01 | 2007-03-07 |  |  |  | 177d |  |  |  |
| 226 | 1.6.2.1.1 | Adopter deployment of previous iteration |  | 5d | 2007-03-01 | 2007-03-07 |  |  |  | 177d |  |  |  |
| 227 | 1.6.2.2 | **Update adopter test plan (task 5.5.1)** |  | 30d | 2007-03-01 A | 2007-04-11 |  | 67% | 10d | 152d | Adopters; Developers; BAH | 1000h | 680h |
| 228 | 1.6.2.2.1 | Adopter update test script |  | 5d | 2007-03-01 A | 2007-03-07 A |  | 100% |  |  | Adopters | 40h | 40h |
| 229 | 1.6.2.2.2 | Adopter update test approach |  | 5d | 2007-03-08 A | 2007-03-14 A | 228 | 100% |  |  | Adopters | 40h | 40h |
| 230 | 1.6.2.2.3 | Developer review |  | 5d | 2007-03-15 A | 2007-03-21 A | 229 | 100% |  |  | Patrick; Ram | 80h | 80h |
| 231 | 1.6.2.2.4 | Adopter update |  | 5d | 2007-03-22 A | 2007-03-28 A | 230 | 100% |  |  | Adopters | 40h | 40h |
| 232 | 1.6.2.2.5 | Developer deliver adopter test plan to BAH (task 5.5.1) | milestone | 0d | 2007-03-28 A | 2007-03-28 A | 231 | 100% |  |  | Patrick |  |  |
| 233 | 1.6.2.2.6 | BAH review adopter test plan (task 5.5.1) |  | 10d | 2007-03-29 | 2007-04-11 | 232 |  |  | 152d | BAH | 80h |  |

| ID | WBS | Task | Type | Duration | Start | Finish | Predecessors | Complete | Remaining | Total slack | Resources | Work | Actual work |
| --- | --- | --- | --- | --- | --- | --- | --- | --- | --- | --- | --- | --- | --- |
| 234 | 1.6.2.3 | **Functional testing (task 5.6.1)** |  | 22d | 2007-03-08 A | 2007-04-06 | 228 | 58% | 9.17d | 155d | Adopters; BAH | 544h | 317.33h |
| 235 | 1.6.2.3.1 | Adopter create test data |  | 5d | 2007-03-08 A | 2007-03-14 A |  | 100% |  |  | Adopters | 40h | 40h |
| 236 | 1.6.2.3.2 | Adopter perform test script |  | 5d | 2007-03-15 A | 2007-03-21 A | 235 | 100% |  |  | Adopters | 40h | 40h |
| 237 | 1.6.2.3.3 | Adopter document results |  | 2d | 2007-03-22 A | 2007-03-23 A | 236 | 100% |  |  | Adopters | 16h | 16h |
| 238 | 1.6.2.3.4 | Adopter log bugs |  | 2d | 2007-03-26 A | 2007-03-27 A | 237 | 100% |  |  | Adopters | 16h | 16h |
| 239 | 1.6.2.3.5 | Developer deliver adopter test report to BAH (task 5.6.1) | milestone | 0d | 2007-03-23 A | 2007-03-23 A | 237 | 100% |  |  | Patrick |  |  |
| 240 | 1.6.2.3.6 | BAH review adopter test report (task 5.6.1) |  | 10d | 2007-03-26 | 2007-04-06 | 239 |  |  | 155d | BAH | 80h |  |
| 241 | 1.7 | **Documentation** |  | 15d | 2007-03-23 A | 2007-04-12 | 2 | 26% | 11.11d | 151d | Developers; Adopters; BAH | 1656h | 429.33h |
| 242 | 1.7.1 | **Installation guide (task 3.10.1)** |  | 13d | 2007-03-27 A | 2007-04-12 | 206FS-3d | 23% | 10d | 151d | Developers; BAH | 312h | 72h |
| 243 | 1.7.1.1 | Update installation guide |  | 3d | 2007-03-27 A | 2007-03-29 A |  | 100% |  |  | Developers | 24h | 24h |
| 244 | 1.7.1.2 | Deliver installation guide to BAH (task 3.10.1) | milestone | 0d | 2007-03-29 A | 2007-03-29 A | 243 | 100% |  |  | Patrick |  |  |
| 245 | 1.7.1.3 | BAH review of installation guide (task 3.10.1) |  | 10d | 2007-03-30 | 2007-04-12 | 244 |  |  | 151d | BAH | 80h |  |
| 246 | 1.7.2 | **Administration guide (task 3.13.1)** |  | 13d | 2007-03-27 A | 2007-04-12 | 206FS-3d | 23% | 10d | 151d | Developers; BAH | 312h | 72h |
| 247 | 1.7.2.1 | Update administration guide |  | 3d | 2007-03-27 A | 2007-03-29 A |  | 100% |  |  | Developers | 24h | 24h |
| 248 | 1.7.2.2 | Deliver administration guide to BAH (task 3.13.1) | milestone | 0d | 2007-03-29 A | 2007-03-29 A | 247 | 100% |  |  | Patrick |  |  |
| 249 | 1.7.2.3 | BAH review of administration guide (task 3.13.1) |  | 10d | 2007-03-30 | 2007-04-12 | 248 |  |  | 151d | BAH | 80h |  |
| 250 | 1.7.3 | **Release notes (task 3.14.1)** |  | 13d | 2007-03-27 A | 2007-04-12 | 206FS-3d | 23% | 10d | 151d | Developers; BAH | 312h | 72h |
| 251 | 1.7.3.1 | Update release notes |  | 3d | 2007-03-27 A | 2007-03-29 A |  | 100% |  |  | Developers | 24h | 24h |
| 252 | 1.7.3.2 | Deliver release notes to BAH (task 3.14.1) | milestone | 0d | 2007-03-29 A | 2007-03-29 A | 251 | 100% |  |  | Patrick |  |  |
| 253 | 1.7.3.3 | BAH review of release notes (task 3.14.1) |  | 10d | 2007-03-30 | 2007-04-12 | 252 |  |  | 151d | BAH | 80h |  |
| 254 | 1.7.4 | **Adopter summary of C3PR (task 5.1.1)** |  | 15d | 2007-03-23 A | 2007-04-12 | 206FS-5d | 33% | 10d | 151d | Adopters; BAH | 360h | 120h |
| 255 | 1.7.4.1 | Adopter update summary |  | 3d | 2007-03-23 A | 2007-03-27 A |  | 100% |  |  | Adopters | 24h | 24h |
| 256 | 1.7.4.2 | Developer review summary |  | 1d | 2007-03-28 A | 2007-03-28 A | 255 | 100% |  |  | Developers | 8h | 8h |
| 257 | 1.7.4.3 | Adopter update summary |  | 1d | 2007-03-29 A | 2007-03-29 A | 256 | 100% |  |  | Adopters | 8h | 8h |
| 258 | 1.7.4.4 | Developer deliver C3PR summary to BAH (task 5.1.1) | milestone | 0d | 2007-03-29 A | 2007-03-29 A | 257 | 100% |  |  | Patrick |  |  |
| 259 | 1.7.4.5 | BAH review of C3PR summary (task 5.1.1) |  | 10d | 2007-03-30 | 2007-04-12 | 258 |  |  | 151d | BAH | 80h |  |

| ID | WBS | Task | Type | Duration | Start | Finish | Predecessors | Complete | Total slack | Free slack | Constraint | Resources | Work | Actual work |
| --- | --- | --- | --- | --- | --- | --- | --- | --- | --- | --- | --- | --- | --- | --- |
| 260 | 1.8 | **Support** |  | 22d | 2007-03-01 A | 2007-03-30 A | 2 | 100% |  |  |  | Developers | 528h | 528h |
| 261 | 1.8.1 | Adopter support |  | 22d | 2007-03-01 A | 2007-03-30 A |  | 100% |  |  |  | Developers | 176h | 176h |
| 262 | 1.8.2 | Bug fixing |  | 22d | 2007-03-01 A | 2007-03-30 A |  | 100% |  |  |  | Developers | 176h | 176h |
| 263 | 1.9 | **Demonstration** |  | 0d | 2007-04-09 | 2007-04-09 | 2 |  | 155d |  |  | Patrick; Ram; BAH |  |  |
| 264 | 1.9.1 | Demonstrate latest features to BAH | milestone | 0d | 2007-04-09 | 2007-04-09 | 2 |  | 155d |  | start no earlier than 2007-04-09 | Patrick; Ram; BAH |  |  |
| 265 | 2 | **Iteration 2 (eligibility, study personnel/security, C3D integration, multi-site study)** |  | 35d | 2007-04-02 | 2007-05-18 |  |  | 125d |  |  |  | 20520h |  |
| 266 | 2.1 | Iteration start | milestone | 0d | 2007-04-02 | 2007-04-02 |  |  | 125d | 0d | start no earlier than 2007-04-02 |  |  |  |
| 267 | 2.2 | **Project Management** |  | 30d | 2007-04-02 | 2007-05-11 | 266 |  | 130d |  |  | Patrick; Adopters; BAH | 2640h |  |
| 268 | 2.2.1 | **Draft project plan (task 1.1)** |  | 30d | 2007-04-02 | 2007-05-11 |  |  | 130d |  |  | Patrick; Adopters; BAH | 960h |  |
| 269 | 2.2.1.1 | Developer draft |  | 5d | 2007-04-02 | 2007-04-06 |  |  | 130d | 0d |  | Patrick | 40h |  |
| 270 | 2.2.1.2 | BAH review |  | 5d | 2007-04-09 | 2007-04-13 | 269 |  | 130d | 0d |  | BAH | 40h |  |
| 271 | 2.2.1.3 | Developer update |  | 5d | 2007-04-16 | 2007-04-20 | 270 |  | 130d | 0d |  | Patrick | 40h |  |
| 272 | 2.2.1.4 | Adopter review |  | 3d | 2007-04-23 | 2007-04-25 | 271 |  | 130d | 0d |  | Adopters | 24h |  |
| 273 | 2.2.1.5 | Developer update |  | 2d | 2007-04-26 | 2007-04-27 | 272 |  | 130d | 0d |  | Patrick | 16h |  |
| 274 | 2.2.1.6 | Deliver project plan to BAH (task 1.1) | milestone | 0d | 2007-04-27 | 2007-04-27 | 273 |  | 130d | 0d |  | Patrick |  |  |
| 275 | 2.2.1.7 | BAH review project plan (task 1.1) |  | 10d | 2007-04-30 | 2007-05-11 | 274 |  | 130d |  |  | BAH | 80h |  |
| 276 | 2.2.2 | **Update risk matrix (task 1.4.2)** |  | 20d | 2007-04-02 | 2007-04-27 |  |  | 130d |  |  | Patrick; BAH | 480h |  |
| 277 | 2.2.2.1 | Update risk matrix for week 1 |  | 5d | 2007-04-02 | 2007-04-06 |  |  | 130d | 0d |  | Patrick | 40h |  |
| 278 | 2.2.2.2 | Update risk matrix for week 2 |  | 5d | 2007-04-09 | 2007-04-13 | 277 |  | 130d | 0d |  | Patrick | 40h |  |
| 279 | 2.2.2.3 | Deliver risk matrix to BAH (task 1.4.2) | milestone | 0d | 2007-04-13 | 2007-04-13 | 278 |  | 130d | 0d |  | Patrick |  |  |
| 280 | 2.2.2.4 | BAH review risk matrix (task 1.4.2) |  | 10d | 2007-04-16 | 2007-04-27 | 279 |  | 140d |  |  | BAH | 80h |  |
| 281 | 2.2.3 | **Monthly report (task 1.3.2)** |  | 20d | 2007-04-16 | 2007-05-11 | 279 |  | 130d |  |  | Patrick; BAH | 480h |  |
| 282 | 2.2.3.1 | Update risk matrix for week 3 |  | 5d | 2007-04-16 | 2007-04-20 |  |  | 130d | 0d |  | Patrick | 40h |  |
| 283 | 2.2.3.2 | Update risk matrix for week 4 |  | 5d | 2007-04-23 | 2007-04-27 | 282 |  | 130d | 0d |  | Patrick | 40h |  |
| 284 | 2.2.3.3 | Deliver monthly report and risk matrix to BAH (task 1.3.2) | milestone | 0d | 2007-04-27 | 2007-04-27 | 283 |  | 130d | 0d |  | Patrick |  |  |
| 285 | 2.2.3.4 | BAH review monthly report and risk matrix (task 1.3.2) |  | 10d | 2007-04-30 | 2007-05-11 | 284 |  | 130d |  |  | BAH | 80h |  |

| ID | WBS | Task | Duration | Start | Finish | Predecessors | Total slack | Free slack | Resources | Work |
| --- | --- | --- | --- | --- | --- | --- | --- | --- | --- | --- |
| 286 | 2.3 | **Requirements and use cases** | 32d | 2007-04-02 | 2007-05-15 | 266 | 125d |  | Developers; Adopters; BAH | 4048h |
| 287 | 2.3.1 | **Create level 1 use cases and requirements** | 4d | 2007-04-02 | 2007-04-05 |  | 125d | 0d | Developers | 288h |
| 288 | 2.3.1.1 | **Level 1 use cases for eligibility** | 2d | 2007-04-02 | 2007-04-03 |  | 127d |  | Kruttik; Priyatam | 64h |
| 289 | 2.3.1.1.1 | Use case document (task 3.1.1) | 1d | 2007-04-02 | 2007-04-02 |  | 127d | 0d | Kruttik; Priyatam | 16h |
| 290 | 2.3.1.1.2 | Requirements document (3.2.1) | 1d | 2007-04-03 | 2007-04-03 | 289 | 127d |  | Kruttik; Priyatam | 16h |
| 291 | 2.3.1.2 | **Level 1 use cases for study personnel** | 2d | 2007-04-02 | 2007-04-03 |  | 127d |  | Priyatam; Kula | 64h |
| 292 | 2.3.1.2.1 | Use case document (task 3.1.1) | 1d | 2007-04-02 | 2007-04-02 |  | 127d | 0d | Priyatam; Kula | 16h |
| 293 | 2.3.1.2.2 | Requirements document (3.2.1) | 1d | 2007-04-03 | 2007-04-03 | 292 | 127d |  | Priyatam; Kula | 16h |
| 294 | 2.3.1.3 | **Level 1 use cases for registration management** | 2d | 2007-04-02 | 2007-04-03 |  | 127d |  | Ramakrishna | 32h |
| 295 | 2.3.1.3.1 | Use case document (task 3.1.1) | 1d | 2007-04-02 | 2007-04-02 |  | 127d | 0d | Ramakrishna | 8h |
| 296 | 2.3.1.3.2 | Requirements document (3.2.1) | 1d | 2007-04-03 | 2007-04-03 | 295 | 127d |  | Ramakrishna | 8h |
| 297 | 2.3.1.4 | **Level 1 use cases for multi-site study** | 4d | 2007-04-02 | 2007-04-05 |  | 125d |  | Manav | 64h |
| 298 | 2.3.1.4.1 | Use case document (task 3.1.1) | 2d | 2007-04-02 | 2007-04-03 |  | 125d | 0d | Manav | 16h |
| 299 | 2.3.1.4.2 | Requirements document (3.2.1) | 2d | 2007-04-04 | 2007-04-05 | 298 | 125d |  | Manav | 16h |
| 300 | 2.3.1.5 | **Level 1 use cases for C3D integration** | 2d | 2007-04-02 | 2007-04-03 |  | 127d |  | Manav | 32h |
| 301 | 2.3.1.5.1 | Use case document (task 3.1.1) | 1d | 2007-04-02 | 2007-04-02 |  | 127d | 0d | Manav | 8h |
| 302 | 2.3.1.5.2 | Requirements document (3.2.1) | 1d | 2007-04-03 | 2007-04-03 | 301 | 127d |  | Manav | 8h |
| 303 | 2.3.2 | **Update use case document (task 3.1.2, task 5.2.2)** | 9d | 2007-04-06 | 2007-04-18 | 287 | 128d | 0d | Developers; Adopters | 1416h |
| 304 | 2.3.2.1 | **Update eligibility use cases** | 9d | 2007-04-06 | 2007-04-18 |  | 128d |  | Kruttik; Adopters; Priyatam | 312h |
| 305 | 2.3.2.1.1 | Developer update | 2d | 2007-04-06 | 2007-04-09 |  | 128d | 0d | Kruttik; Priyatam | 32h |
| 306 | 2.3.2.1.2 | Adopter review | 5d | 2007-04-10 | 2007-04-16 | 305 | 128d | 0d | Adopters | 40h |
| 307 | 2.3.2.1.3 | Developer update | 1d | 2007-04-17 | 2007-04-17 | 306 | 128d | 0d | Kruttik; Priyatam | 16h |
| 308 | 2.3.2.1.4 | Adopter sign-off | 1d | 2007-04-18 | 2007-04-18 | 307 | 128d |  | Adopters | 8h |
| 309 | 2.3.2.2 | **Update study personnel use cases** | 9d | 2007-04-06 | 2007-04-18 |  | 128d |  | Priyatam; Adopters; Kula | 312h |
| 310 | 2.3.2.2.1 | Developer update | 2d | 2007-04-06 | 2007-04-09 |  | 128d | 0d | Priyatam; Kula | 32h |
| 311 | 2.3.2.2.2 | Adopter review | 5d | 2007-04-10 | 2007-04-16 | 310 | 128d | 0d | Adopters | 40h |
| 312 | 2.3.2.2.3 | Developer update | 1d | 2007-04-17 | 2007-04-17 | 311 | 128d | 0d | Priyatam; Kula | 16h |
| 313 | 2.3.2.2.4 | Adopter sign-off | 1d | 2007-04-18 | 2007-04-18 | 312 | 128d |  | Adopters | 8h |

| ID | WBS | Task | Duration | Start | Finish | Predecessors | Total slack | Free slack | Resources | Work |
| --- | --- | --- | --- | --- | --- | --- | --- | --- | --- | --- |
| 314 | 2.3.2.3 | **Update registration management use cases** | 9d | 2007-04-06 | 2007-04-18 |  | 128d |  | Ramakrishna; Adopters | 216h |
| 315 | 2.3.2.3.1 | Developer update | 2d | 2007-04-06 | 2007-04-09 |  | 128d | 0d | Ramakrishna | 16h |
| 316 | 2.3.2.3.2 | Adopter review | 5d | 2007-04-10 | 2007-04-16 | 315 | 128d | 0d | Adopters | 40h |
| 317 | 2.3.2.3.3 | Developer update | 1d | 2007-04-17 | 2007-04-17 | 316 | 128d | 0d | Ramakrishna | 8h |
| 318 | 2.3.2.3.4 | Adopter sign-off | 1d | 2007-04-18 | 2007-04-18 | 317 | 128d |  | Adopters | 8h |
| 319 | 2.3.2.4 | **Update multi-site trial use cases** | 9d | 2007-04-06 | 2007-04-18 |  | 128d |  | Manav; Adopters | 216h |
| 320 | 2.3.2.4.1 | Developer update | 2d | 2007-04-06 | 2007-04-09 |  | 128d | 0d | Manav | 16h |
| 321 | 2.3.2.4.2 | Adopter review | 5d | 2007-04-10 | 2007-04-16 | 320 | 128d | 0d | Adopters | 40h |
| 322 | 2.3.2.4.3 | Developer update | 1d | 2007-04-17 | 2007-04-17 | 321 | 128d | 0d | Manav | 8h |
| 323 | 2.3.2.4.4 | Adopter sign-off | 1d | 2007-04-18 | 2007-04-18 | 322 | 128d |  | Adopters | 8h |
| 324 | 2.3.2.5 | **Update C3D integration use cases** | 9d | 2007-04-06 | 2007-04-18 |  | 128d |  | Manav; Adopters | 216h |
| 325 | 2.3.2.5.1 | Developer update | 2d | 2007-04-06 | 2007-04-09 |  | 128d | 0d | Manav | 16h |
| 326 | 2.3.2.5.2 | Adopter review | 5d | 2007-04-10 | 2007-04-16 | 325 | 128d | 0d | Adopters | 40h |
| 327 | 2.3.2.5.3 | Developer update | 1d | 2007-04-17 | 2007-04-17 | 326 | 128d | 0d | Manav | 8h |
| 328 | 2.3.2.5.4 | Adopter sign-off | 1d | 2007-04-18 | 2007-04-18 | 327 | 128d |  | Adopters | 8h |
| 329 | 2.3.3 | **Update requirements document (task 3.2.2, task 5.3.2)** | 9d | 2007-04-19 | 2007-05-01 | 303 | 128d | 0d | Developers; Adopters | 1416h |
| 330 | 2.3.3.1 | **Update eligibility requirements** | 9d | 2007-04-19 | 2007-05-01 |  | 128d |  | Kruttik; Priyatam; Adopters | 312h |
| 331 | 2.3.3.1.1 | Developer update | 2d | 2007-04-19 | 2007-04-20 |  | 128d | 0d | Kruttik; Priyatam | 32h |
| 332 | 2.3.3.1.2 | Adopter review | 5d | 2007-04-23 | 2007-04-27 | 331 | 128d | 0d | Adopters | 40h |
| 333 | 2.3.3.1.3 | Developer update | 1d | 2007-04-30 | 2007-04-30 | 332 | 128d | 0d | Kruttik; Priyatam | 16h |
| 334 | 2.3.3.1.4 | Adopter sign-off | 1d | 2007-05-01 | 2007-05-01 | 333 | 128d |  | Adopters | 8h |
| 335 | 2.3.3.2 | **Update study personel requirements** | 9d | 2007-04-19 | 2007-05-01 |  | 128d |  | Priyatam; Adopters; Kula | 312h |
| 336 | 2.3.3.2.1 | Developer update | 2d | 2007-04-19 | 2007-04-20 |  | 128d | 0d | Priyatam; Kula | 32h |
| 337 | 2.3.3.2.2 | Adopter review | 5d | 2007-04-23 | 2007-04-27 | 336 | 128d | 0d | Adopters | 40h |
| 338 | 2.3.3.2.3 | Developer update | 1d | 2007-04-30 | 2007-04-30 | 337 | 128d | 0d | Priyatam; Kula | 16h |
| 339 | 2.3.3.2.4 | Adopter sign-off | 1d | 2007-05-01 | 2007-05-01 | 338 | 128d |  | Adopters | 8h |

| ID | WBS | Task | Type | Duration | Start | Finish | Predecessors | Total slack | Free slack | Resources | Work |
| --- | --- | --- | --- | --- | --- | --- | --- | --- | --- | --- | --- |
| 340 | 2.3.3.3 | **Update registration management requirements** |  | 9d | 2007-04-19 | 2007-05-01 |  | 128d |  | Ramakrishna; Adopters | 216h |
| 341 | 2.3.3.3.1 | Developer update |  | 2d | 2007-04-19 | 2007-04-20 |  | 128d | 0d | Ramakrishna | 16h |
| 342 | 2.3.3.3.2 | Adopter review |  | 5d | 2007-04-23 | 2007-04-27 | 341 | 128d | 0d | Adopters | 40h |
| 343 | 2.3.3.3.3 | Developer update |  | 1d | 2007-04-30 | 2007-04-30 | 342 | 128d | 0d | Ramakrishna | 8h |
| 344 | 2.3.3.3.4 | Adopter sign-off |  | 1d | 2007-05-01 | 2007-05-01 | 343 | 128d |  | Adopters | 8h |
| 345 | 2.3.3.4 | **Update multi-site trial requirements** |  | 9d | 2007-04-19 | 2007-05-01 |  | 128d |  | Manav; Adopters | 216h |
| 346 | 2.3.3.4.1 | Developer update |  | 2d | 2007-04-19 | 2007-04-20 |  | 128d | 0d | Manav | 16h |
| 347 | 2.3.3.4.2 | Adopter review |  | 5d | 2007-04-23 | 2007-04-27 | 346 | 128d | 0d | Adopters | 40h |
| 348 | 2.3.3.4.3 | Developer update |  | 1d | 2007-04-30 | 2007-04-30 | 347 | 128d | 0d | Manav | 8h |
| 349 | 2.3.3.4.4 | Adopter sign-off |  | 1d | 2007-05-01 | 2007-05-01 | 348 | 128d |  | Adopters | 8h |
| 350 | 2.3.3.5 | **Update C3D integration requirements** |  | 9d | 2007-04-19 | 2007-05-01 |  | 128d |  | Manav; Adopters | 216h |
| 351 | 2.3.3.5.1 | Developer update |  | 2d | 2007-04-19 | 2007-04-20 |  | 128d | 0d | Manav | 16h |
| 352 | 2.3.3.5.2 | Adopter review |  | 5d | 2007-04-23 | 2007-04-27 | 351 | 128d | 0d | Adopters | 40h |
| 353 | 2.3.3.5.3 | Developer update |  | 1d | 2007-04-30 | 2007-04-30 | 352 | 128d | 0d | Manav | 8h |
| 354 | 2.3.3.5.4 | Adopter sign-off |  | 1d | 2007-05-01 | 2007-05-01 | 353 | 128d |  | Adopters | 8h |
| 355 | 2.3.4 | Developer deliver use case document to BAH (task 3.1.2, task 5.2.2) | milestone | 0d | 2007-05-01 | 2007-05-01 | 329 | 128d | 0d | Patrick |  |
| 356 | 2.3.5 | BAH review use case document (task 3.1.2, task 5.2.2) |  | 10d | 2007-05-02 | 2007-05-15 | 355 | 128d |  | BAH | 80h |
| 357 | 2.3.6 | Developer deliver requirements document to BAH (task 3.2.2, task 5.3.2) | milestone | 0d | 2007-05-01 | 2007-05-01 | 329 | 128d | 0d | Patrick |  |
| 358 | 2.3.7 | BAH review requirements document (task 3.2.2, task 5.3.2) |  | 10d | 2007-05-02 | 2007-05-15 | 357 | 128d |  | BAH | 80h |
| 359 | 2.4 | **Analysis and Design** |  | 31d | 2007-04-06 | 2007-05-18 | 287, 266 | 125d |  | Developers; Adopters; BAH | 4168h |
| 360 | 2.4.1 | **Perform level 1 design** |  | 4d | 2007-04-06 | 2007-04-11 |  | 125d | 0d | Developers | 64h |
| 361 | 2.4.1.1 | Cursory BRIDG harmonization |  | 1d | 2007-04-06 | 2007-04-06 |  | 125d | 0d | Developers | 8h |
| 362 | 2.4.1.2 | Update implementation model |  | 1d | 2007-04-09 | 2007-04-09 | 361 | 125d | 0d | Developers | 8h |
| 363 | 2.4.1.3 | Cursory system design |  | 2d | 2007-04-10 | 2007-04-11 | 362 | 125d |  | Developers | 16h |

| ID | WBS | Task | Type | Duration | Start | Finish | Predecessors | Total slack | Free slack | Resources | Work |
| --- | --- | --- | --- | --- | --- | --- | --- | --- | --- | --- | --- |
| 364 | 2.4.2 | **Modeling (task 3.3.2)** |  | 27d | 2007-04-12 | 2007-05-18 | 360 | 125d |  | Developers; Adopters | 1080h |
| 365 | 2.4.2.1 | **Update model** |  | 6d | 2007-04-12 | 2007-04-19 |  | 125d | 0d | Developers | 240h |
| 366 | 2.4.2.1.1 | **BRIDG harmonization** |  | 3d | 2007-04-12 | 2007-04-16 | 360 | 125d | 0d |  | 96h |
| 367 | 2.4.2.1.1.1 | Harmonize Study model |  | 2d | 2007-04-12 | 2007-04-13 |  | 126d |  | Kruttik; Priyatam; Manav | 48h |
| 368 | 2.4.2.1.1.2 | Harmonize Personnel model |  | 3d | 2007-04-12 | 2007-04-16 |  | 125d |  | Ramakrishna | 24h |
| 369 | 2.4.2.1.1.3 | Harmonize Multi-site Study model |  | 3d | 2007-04-12 | 2007-04-16 |  | 125d |  | Manav | 24h |
| 370 | 2.4.2.1.2 | **Model implementation** |  | 3d | 2007-04-17 | 2007-04-19 | 366 | 125d |  |  | 96h |
| 371 | 2.4.2.1.2.1 | Implement Study model |  | 2d | 2007-04-17 | 2007-04-18 |  | 126d |  | Kruttik; Priyatam; Manav | 48h |
| 372 | 2.4.2.1.2.2 | Implement Personnel model |  | 3d | 2007-04-17 | 2007-04-19 |  | 125d |  | Ramakrishna | 24h |
| 373 | 2.4.2.1.2.3 | Implement Multi-site Study model |  | 3d | 2007-04-17 | 2007-04-19 |  | 125d |  | Manav | 24h |
| 374 | 2.4.2.2 | Adopter review |  | 5d | 2007-04-20 | 2007-04-26 | 365 | 125d | 0d | Adopters | 40h |
| 375 | 2.4.2.3 | **Update model** |  | 6d | 2007-04-27 | 2007-05-04 | 374 | 125d | 0d | Developers | 288h |
| 376 | 2.4.2.3.1 | **BRIDG harmonization** |  | 3d | 2007-04-27 | 2007-05-01 | 374 | 125d | 0d |  | 120h |
| 377 | 2.4.2.3.1.1 | Harmonize Study model |  | 3d | 2007-04-27 | 2007-05-01 |  | 125d |  | Kruttik; Priyatam; Manav | 72h |
| 378 | 2.4.2.3.1.2 | Harmonize Personnel model |  | 3d | 2007-04-27 | 2007-05-01 |  | 125d |  | Ramakrishna | 24h |
| 379 | 2.4.2.3.1.3 | Harmonize Multi-site Study model |  | 3d | 2007-04-27 | 2007-05-01 |  | 125d | 0d | Manav | 24h |
| 380 | 2.4.2.3.2 | **Model implementation** |  | 3d | 2007-05-02 | 2007-05-04 | 376, 379 | 125d |  |  | 120h |
| 381 | 2.4.2.3.2.1 | Implement Study model |  | 3d | 2007-05-02 | 2007-05-04 |  | 125d |  | Kruttik; Priyatam; Manav | 72h |
| 382 | 2.4.2.3.2.2 | Implement Personnel model |  | 3d | 2007-05-02 | 2007-05-04 |  | 125d |  | Ramakrishna | 24h |
| 383 | 2.4.2.3.2.3 | Implement Multi-site Study model |  | 3d | 2007-05-02 | 2007-05-04 |  | 125d | 0d | Manav | 24h |
| 384 | 2.4.2.4 | Developer deliver UML to BAH (task 3.3.2) | milestone | 0d | 2007-05-04 | 2007-05-04 | 375, 383 | 125d | 0d | Patrick |  |
| 385 | 2.4.2.5 | BAH review of UML (task 3.3.2) |  | 10d | 2007-05-07 | 2007-05-18 | 384 | 125d |  | BAH | 80h |
| 386 | 2.4.3 | **System design (task 3.4.2)** |  | 25d | 2007-04-12 | 2007-05-16 | 360 | 127d |  | Developers; BAH | 2160h |
| 387 | 2.4.3.1 | **Design eligibility** |  | 15d | 2007-04-12 | 2007-05-02 |  | 127d | 0d | Kruttik; Priyatam | 480h |
| 388 | 2.4.3.1.1 | Draft UML |  | 5d | 2007-04-12 | 2007-04-18 |  | 127d | 0d | Kruttik; Priyatam | 80h |
| 389 | 2.4.3.1.2 | Team review |  | 5d | 2007-04-19 | 2007-04-25 | 388 | 127d | 0d | Kruttik; Priyatam | 80h |
| 390 | 2.4.3.1.3 | Update design document |  | 5d | 2007-04-26 | 2007-05-02 | 389 | 127d |  | Kruttik; Priyatam | 80h |

| ID | WBS | Task | Type | Duration | Start | Finish | Predecessors | Total slack | Free slack | Resources | Work |
| --- | --- | --- | --- | --- | --- | --- | --- | --- | --- | --- | --- |
| 391 | 2.4.3.2 | **Design personnel** |  | 15d | 2007-04-12 | 2007-05-02 |  | 127d | 0d | Priyatam; Kula | 480h |
| 392 | 2.4.3.2.1 | Draft UML |  | 5d | 2007-04-12 | 2007-04-18 |  | 127d | 0d | Priyatam; Kula | 80h |
| 393 | 2.4.3.2.2 | Team review |  | 5d | 2007-04-19 | 2007-04-25 | 392 | 127d | 0d | Priyatam; Kula | 80h |
| 394 | 2.4.3.2.3 | Update design document |  | 5d | 2007-04-26 | 2007-05-02 | 393 | 127d |  | Priyatam; Kula | 80h |
| 395 | 2.4.3.3 | **Design registration management** |  | 15d | 2007-04-12 | 2007-05-02 |  | 127d | 0d | Ramakrishna | 240h |
| 396 | 2.4.3.3.1 | Draft UML |  | 5d | 2007-04-12 | 2007-04-18 |  | 127d | 0d | Ramakrishna | 40h |
| 397 | 2.4.3.3.2 | Team review |  | 5d | 2007-04-19 | 2007-04-25 | 396 | 127d | 0d | Ramakrishna | 40h |
| 398 | 2.4.3.3.3 | Update design document |  | 5d | 2007-04-26 | 2007-05-02 | 397 | 127d |  | Ramakrishna | 40h |
| 399 | 2.4.3.4 | **Design multi-site study** |  | 15d | 2007-04-12 | 2007-05-02 |  | 127d | 0d | Manav | 240h |
| 400 | 2.4.3.4.1 | Draft UML |  | 5d | 2007-04-12 | 2007-04-18 |  | 127d | 0d | Manav | 40h |
| 401 | 2.4.3.4.2 | Team review |  | 5d | 2007-04-19 | 2007-04-25 | 400 | 127d | 0d | Manav | 40h |
| 402 | 2.4.3.4.3 | Update design document |  | 5d | 2007-04-26 | 2007-05-02 | 401 | 127d |  | Manav | 40h |
| 403 | 2.4.3.5 | **Design C3D integration** |  | 15d | 2007-04-12 | 2007-05-02 |  | 127d | 0d | Manav | 240h |
| 404 | 2.4.3.5.1 | Draft UML |  | 5d | 2007-04-12 | 2007-04-18 |  | 127d | 0d | Manav | 40h |
| 405 | 2.4.3.5.2 | Team review |  | 5d | 2007-04-19 | 2007-04-25 | 404 | 127d | 0d | Manav | 40h |
| 406 | 2.4.3.5.3 | Update design document |  | 5d | 2007-04-26 | 2007-05-02 | 405 | 127d |  | Manav | 40h |
| 407 | 2.4.3.6 | Deliver design doc to BAH (task 3.4.2) | milestone | 0d | 2007-05-02 | 2007-05-02 | 387, 391, 395, 399, 403 | 127d | 0d | Patrick |  |
| 408 | 2.4.3.7 | BAH review design doc (task 3.4.2) |  | 10d | 2007-05-03 | 2007-05-16 | 407 | 127d |  | BAH | 80h |
| 409 | 2.4.4 | **Research** |  | 5d | 2007-04-06 | 2007-04-12 |  | 151d |  | Manav | 120h |
| 410 | 2.4.4.1 | **Investigate C3D integration** |  | 5d | 2007-04-06 | 2007-04-12 |  | 151d |  | Manav | 80h |
| 411 | 2.4.4.1.1 | Investigate C3D SSO versus CTMSi SSO |  | 5d | 2007-04-06 | 2007-04-12 |  | 151d |  | Manav | 40h |
| 412 | 2.5 | **Implementation (task 3.5.2)** |  | 25d | 2007-04-12 | 2007-05-16 | 360, 266 | 126d |  | Developers; BAH | 2736h |
| 413 | 2.5.1 | **Database** |  | 3d | 2007-04-12 | 2007-04-16 |  | 126d | 0d | Developers | 216h |
| 414 | 2.5.1.1 | **Eligibility model** |  | 3d | 2007-04-12 | 2007-04-16 |  | 126d | 0d | Kruttik; Priyatam | 96h |
| 415 | 2.5.1.1.1 | Update DDLs |  | 1d | 2007-04-12 | 2007-04-12 |  | 126d | 0d | Kruttik; Priyatam | 16h |
| 416 | 2.5.1.1.2 | Apply to database |  | 1d | 2007-04-13 | 2007-04-13 | 415 | 126d | 0d | Kruttik; Priyatam | 16h |
| 417 | 2.5.1.1.3 | Create test data |  | 1d | 2007-04-16 | 2007-04-16 | 416 | 126d |  | Kruttik; Priyatam | 16h |

| ID | WBS | Task | Duration | Start | Finish | Predecessors | Total slack | Free slack | Resources | Work |
| --- | --- | --- | --- | --- | --- | --- | --- | --- | --- | --- |
| 418 | 2.5.1.2 | **Study personnel** | 3d | 2007-04-12 | 2007-04-16 |  | 127d | 0d | Ramakrishna | 48h |
| 419 | 2.5.1.2.1 | Update DDLs | 1d | 2007-04-12 | 2007-04-12 |  | 127d | 0d | Ramakrishna | 8h |
| 420 | 2.5.1.2.2 | Apply to database | 1d | 2007-04-13 | 2007-04-13 | 419 | 127d | 0d | Ramakrishna | 8h |
| 421 | 2.5.1.2.3 | Create test data | 1d | 2007-04-16 | 2007-04-16 | 420 | 127d |  | Ramakrishna | 8h |
| 422 | 2.5.1.3 | **Multi-site** | 3d | 2007-04-12 | 2007-04-16 |  | 127d | 0d | Manav | 48h |
| 423 | 2.5.1.3.1 | Update DDLs | 1d | 2007-04-12 | 2007-04-12 |  | 127d | 0d | Manav | 8h |
| 424 | 2.5.1.3.2 | Apply to database | 1d | 2007-04-13 | 2007-04-13 | 423 | 127d | 0d | Manav | 8h |
| 425 | 2.5.1.3.3 | Create test data | 1d | 2007-04-16 | 2007-04-16 | 424 | 127d |  | Manav | 8h |
| 426 | 2.5.2 | **Business layer** | 10d | 2007-04-17 | 2007-04-30 |  | 126d |  | Developers | 816h |
| 427 | 2.5.2.1 | **Implement eligibility APIs** | 7d | 2007-04-17 | 2007-04-25 | 414 | 126d | 0d | Kruttik; Priyatam | 224h |
| 428 | 2.5.2.1.1 | Update APIs | 2d | 2007-04-17 | 2007-04-18 |  | 126d | 0d | Kruttik; Priyatam | 32h |
| 429 | 2.5.2.1.2 | Implement APIs | 3d | 2007-04-19 | 2007-04-23 | 428 | 126d | 0d | Kruttik; Priyatam | 48h |
| 430 | 2.5.2.1.3 | Deploy APIs | 2d | 2007-04-24 | 2007-04-25 | 429 | 126d |  | Kruttik; Priyatam | 32h |
| 431 | 2.5.2.2 | **Implement study personnel APIs** | 6d | 2007-04-17 | 2007-04-24 | 418 | 127d | 0d | Ramakrishna | 96h |
| 432 | 2.5.2.2.1 | Update APIs | 2d | 2007-04-17 | 2007-04-18 |  | 127d | 0d | Ramakrishna | 16h |
| 433 | 2.5.2.2.2 | Implement APIs | 3d | 2007-04-19 | 2007-04-23 | 432 | 127d | 0d | Ramakrishna | 24h |
| 434 | 2.5.2.2.3 | Deploy APIs | 1d | 2007-04-24 | 2007-04-24 | 433 | 127d |  | Ramakrishna | 8h |
| 435 | 2.5.2.3 | **Implement C3PR registration APIs** | 6d | 2007-04-17 | 2007-04-24 | 422 | 127d | 0d | Manav | 96h |
| 436 | 2.5.2.3.1 | Update APIs | 2d | 2007-04-17 | 2007-04-18 |  | 127d | 0d | Manav | 16h |
| 437 | 2.5.2.3.2 | Implement APIs | 3d | 2007-04-19 | 2007-04-23 | 436 | 127d | 0d | Manav | 24h |
| 438 | 2.5.2.3.3 | Deploy APIs | 1d | 2007-04-24 | 2007-04-24 | 437 | 127d |  | Manav | 8h |
| 439 | 2.5.2.4 | **Implement import eligibility** | 10d | 2007-04-17 | 2007-04-30 | 414 | 139d |  | Kruttik; Priyatam | 320h |
| 440 | 2.5.2.4.1 | Import eligibility from a file | 5d | 2007-04-17 | 2007-04-23 |  | 139d | 0d | Kruttik; Priyatam | 80h |
| 441 | 2.5.2.4.2 | Import eligibility from the caDSR | 5d | 2007-04-24 | 2007-04-30 | 440 | 139d |  | Kruttik; Priyatam | 80h |

| ID | WBS | Task | Type | Duration | Start | Finish | Predecessors | Total slack | Free slack | Resources | Work |
| --- | --- | --- | --- | --- | --- | --- | --- | --- | --- | --- | --- |
| 442 | 2.5.3 | **ESB** |  | 5d | 2007-04-17 | 2007-04-23 | 413 | 144d |  | Manav | 80h |
| 443 | 2.5.3.1 | Implement binding components for C3D |  | 5d | 2007-04-17 | 2007-04-23 |  | 144d |  | Manav | 40h |
| 444 | 2.5.4 | **Security** |  | 5d | 2007-04-12 | 2007-04-18 |  | 147d |  | Ramakrishna; Manav | 240h |
| 445 | 2.5.4.1 | Connect C3PR roles to GridGrouper groups |  | 5d | 2007-04-12 | 2007-04-18 |  | 147d |  | Ramakrishna; Manav | 80h |
| 446 | 2.5.4.2 | Hook groups into authorization |  | 5d | 2007-04-12 | 2007-04-18 |  | 147d |  | Ramakrishna; Manav | 80h |
| 447 | 2.5.5 | **Web interface** |  | 15d | 2007-04-12 | 2007-05-02 |  | 126d | 0d | Developers | 904h |
| 448 | 2.5.5.1 | **Modify study management interface** |  | 6d | 2007-04-25 | 2007-05-02 |  | 126d |  | Kruttik; Priyatam; Manav | 384h |
| 449 | 2.5.5.1.1 | Manage eligibility criteria |  | 5d | 2007-04-26 | 2007-05-02 | 427 | 126d |  | Kruttik; Priyatam; Manav | 120h |
| 450 | 2.5.5.1.2 | Manage multi-site study |  | 5d | 2007-04-25 | 2007-05-01 | 435 | 127d |  | Kruttik; Priyatam; Manav | 120h |
| 451 | 2.5.5.2 | **Modify study personnel management interface** |  | 5d | 2007-04-25 | 2007-05-01 |  | 127d |  | Priyatam; Kula | 160h |
| 452 | 2.5.5.2.1 | Manage study personnel |  | 5d | 2007-04-25 | 2007-05-01 | 431 | 127d |  | Priyatam; Kula | 80h |
| 453 | 2.5.5.3 | **Modify registration interface** |  | 5d | 2007-04-26 | 2007-05-02 |  | 126d |  | Kruttik; Priyatam | 160h |
| 454 | 2.5.5.3.1 | Check eligibility |  | 5d | 2007-04-26 | 2007-05-02 | 427 | 126d | 0d | Kruttik; Priyatam | 80h |
| 455 | 2.5.5.4 | **Modify registration management interface** |  | 5d | 2007-04-12 | 2007-04-18 |  | 136d |  | Ramakrishna | 80h |
| 456 | 2.5.5.4.1 | Manage study subject registration |  | 5d | 2007-04-12 | 2007-04-18 |  | 136d |  | Ramakrishna | 40h |
| 457 | 2.5.6 | Deliver codebase to BAH (task 3.5.2) | milestone | 0d | 2007-05-02 | 2007-05-02 | 413, 447, 454 | 126d | 0d | Patrick |  |
| 458 | 2.5.7 | BAH review codebase (task 3.5.2) |  | 10d | 2007-05-03 | 2007-05-16 | 457 | 127d |  | BAH | 80h |
| 459 | 2.6 | **Testing** |  | 34d | 2007-04-02 | 2007-05-17 | 266 | 126d |  | Developers; Adopters; BAH | 5272h |
| 460 | 2.6.1 | **Developer testing** |  | 34d | 2007-04-02 | 2007-05-17 |  | 126d |  | BAH; Adopters; Developers | 2160h |
| 461 | 2.6.1.1 | **Update developer test plan (task 3.6.2, task 5.4.2)** |  | 30d | 2007-04-02 | 2007-05-11 |  | 130d |  | Developers; Adopters; BAH | 960h |
| 462 | 2.6.1.1.1 | Developer draft |  | 5d | 2007-04-02 | 2007-04-06 |  | 130d | 0d | Developers | 40h |
| 463 | 2.6.1.1.2 | Adopter review |  | 5d | 2007-04-09 | 2007-04-13 | 462 | 130d | 0d | Adopters | 40h |
| 464 | 2.6.1.1.3 | Developer update |  | 5d | 2007-04-16 | 2007-04-20 | 463 | 130d | 0d | Developers | 40h |
| 465 | 2.6.1.1.4 | Adopter review and sign |  | 5d | 2007-04-23 | 2007-04-27 | 464 | 130d | 0d | Adopters | 40h |
| 466 | 2.6.1.1.5 | Deliver signed test plan to BAH (task 3.6.2, task 5.4.2) | milestone | 0d | 2007-04-27 | 2007-04-27 | 465 | 130d | 0d | Patrick |  |
| 467 | 2.6.1.1.6 | BAH review signed test plan (task 3.6.2, task 5.4.2) |  | 10d | 2007-04-30 | 2007-05-11 | 466 | 130d |  | BAH | 80h |

| ID | WBS | Task | Type | Duration | Start | Finish | Predecessors | Total slack | Free slack | Resources | Work |
| --- | --- | --- | --- | --- | --- | --- | --- | --- | --- | --- | --- |
| 468 | 2.6.1.2 | **Integration and system testing (task 3.8.2)** |  | 16d | 2007-04-26 | 2007-05-17 | 457FS-5d | 126d |  | Developers; BAH | 384h |
| 469 | 2.6.1.2.1 | Generate test data |  | 1d | 2007-04-26 | 2007-04-26 |  | 126d | 0d | Developers | 8h |
| 470 | 2.6.1.2.2 | Write tests |  | 3d | 2007-04-27 | 2007-05-01 | 469 | 126d | 0d | Developers | 24h |
| 471 | 2.6.1.2.3 | Validate tests |  | 1d | 2007-05-02 | 2007-05-02 | 470 | 126d | 0d | Developers | 8h |
| 472 | 2.6.1.2.4 | Generate test report |  | 1d | 2007-05-03 | 2007-05-03 | 471 | 126d | 0d | Developers | 8h |
| 473 | 2.6.1.2.5 | Deliver test report to BAH (task 3.8.2) | milestone | 0d | 2007-05-03 | 2007-05-03 | 472 | 126d | 0d | Patrick |  |
| 474 | 2.6.1.2.6 | BAH review test report (task 3.8.2) |  | 10d | 2007-05-04 | 2007-05-17 | 473 | 126d |  | BAH | 80h |
| 475 | 2.6.2 | **Adopter testing** |  | 30d | 2007-04-02 | 2007-05-11 |  | 130d |  | Adopters; Developers; BAH | 2296h |
| 476 | 2.6.2.1 | **Adopter deployment** |  | 5d | 2007-04-02 | 2007-04-06 |  | 155d |  |  |  |
| 477 | 2.6.2.1.1 | Adopter deployment of previous iteration |  | 5d | 2007-04-02 | 2007-04-06 |  | 155d |  |  |  |
| 478 | 2.6.2.2 | **Update adopter test plan (task 5.5.1)** |  | 30d | 2007-04-02 | 2007-05-11 |  | 130d |  | Adopters; Developers; BAH | 1000h |
| 479 | 2.6.2.2.1 | Adopter update test script |  | 5d | 2007-04-02 | 2007-04-06 |  | 130d | 0d | Adopters | 40h |
| 480 | 2.6.2.2.2 | Adopter update test approach |  | 5d | 2007-04-09 | 2007-04-13 | 479 | 130d | 0d | Adopters | 40h |
| 481 | 2.6.2.2.3 | Developer review |  | 5d | 2007-04-16 | 2007-04-20 | 480 | 130d | 0d | Patrick; Ram | 80h |
| 482 | 2.6.2.2.4 | Adopter update |  | 5d | 2007-04-23 | 2007-04-27 | 481 | 130d | 0d | Adopters | 40h |
| 483 | 2.6.2.2.5 | Developer deliver adopter test plan to BAH (task 5.5.1) | milestone | 0d | 2007-04-27 | 2007-04-27 | 482 | 130d | 0d | Patrick |  |
| 484 | 2.6.2.2.6 | BAH review adopter test plan (task 5.5.1) |  | 10d | 2007-04-30 | 2007-05-11 | 483 | 130d |  | BAH | 80h |
| 485 | 2.6.2.3 | **QA testing (task 5.6.1)** |  | 24d | 2007-04-09 | 2007-05-10 | 479 | 131d |  | Adopters; BAH | 576h |
| 486 | 2.6.2.3.1 | Adopter create test data |  | 5d | 2007-04-09 | 2007-04-13 |  | 131d | 0d | Adopters | 40h |
| 487 | 2.6.2.3.2 | Adopter perform test script |  | 5d | 2007-04-16 | 2007-04-20 | 486 | 131d | 0d | Adopters | 40h |
| 488 | 2.6.2.3.3 | Adopter document results |  | 2d | 2007-04-23 | 2007-04-24 | 487 | 131d | 0d | Adopters | 16h |
| 489 | 2.6.2.3.4 | Adopter log bugs |  | 2d | 2007-04-25 | 2007-04-26 | 488 | 131d | 0d | Adopters | 16h |
| 490 | 2.6.2.3.5 | Developer deliver adopter test report to BAH (task 5.6.1) | milestone | 0d | 2007-04-26 | 2007-04-26 | 488, 489 | 131d | 0d | Patrick |  |
| 491 | 2.6.2.3.6 | BAH review adopter test report (task 5.6.1) |  | 10d | 2007-04-27 | 2007-05-10 | 490 | 131d |  | BAH | 80h |

| ID | WBS | Task | Type | Duration | Start | Finish | Predecessors | Total slack | Free slack | Constraint | Resources | Work |
| --- | --- | --- | --- | --- | --- | --- | --- | --- | --- | --- | --- | --- |
| 492 | 2.7 | **Documentation** |  | 15d | 2007-04-26 | 2007-05-16 | 266 | 127d |  |  | Developers; Adopters; BAH | 1656h |
| 493 | 2.7.1 | **Installation guide (task 3.10.2)** |  | 13d | 2007-04-30 | 2007-05-16 | 457FS-3d | 127d |  |  | Developers; BAH | 312h |
| 494 | 2.7.1.1 | Update installation guide |  | 3d | 2007-04-30 | 2007-05-02 |  | 127d | 0d |  | Developers | 24h |
| 495 | 2.7.1.2 | Deliver installation guide to BAH (task 3.10.2) | milestone | 0d | 2007-05-02 | 2007-05-02 | 494 | 127d | 0d |  | Patrick |  |
| 496 | 2.7.1.3 | BAH review of installation guide (task 3.10.2) |  | 10d | 2007-05-03 | 2007-05-16 | 495 | 127d |  |  | BAH | 80h |
| 497 | 2.7.2 | **Administration guide (task 3.13.2)** |  | 13d | 2007-04-30 | 2007-05-16 | 457FS-3d | 127d |  |  | Developers; BAH | 312h |
| 498 | 2.7.2.1 | Update administration guide |  | 3d | 2007-04-30 | 2007-05-02 |  | 127d | 0d |  | Developers | 24h |
| 499 | 2.7.2.2 | Deliver administration guide to BAH (task 3.13.2) | milestone | 0d | 2007-05-02 | 2007-05-02 | 498 | 127d | 0d |  | Patrick |  |
| 500 | 2.7.2.3 | BAH review of administration guide (task 3.13.2) |  | 10d | 2007-05-03 | 2007-05-16 | 499 | 127d |  |  | BAH | 80h |
| 501 | 2.7.3 | **Release notes (task 3.14.2)** |  | 13d | 2007-04-30 | 2007-05-16 | 457FS-3d | 127d |  |  | Developers; BAH | 312h |
| 502 | 2.7.3.1 | Update release notes |  | 3d | 2007-04-30 | 2007-05-02 |  | 127d | 0d |  | Developers | 24h |
| 503 | 2.7.3.2 | Deliver release notes to BAH (task 3.14.2) | milestone | 0d | 2007-05-02 | 2007-05-02 | 502 | 127d | 0d |  | Patrick |  |
| 504 | 2.7.3.3 | BAH review of release notes (task 3.14.2) |  | 10d | 2007-05-03 | 2007-05-16 | 503 | 127d |  |  | BAH | 80h |
| 505 | 2.7.4 | **Adopter summary of C3PR (task 5.1.2)** |  | 15d | 2007-04-26 | 2007-05-16 | 457FS-5d | 127d |  |  | Adopters; BAH | 360h |
| 506 | 2.7.4.1 | Adopter update summary |  | 3d | 2007-04-26 | 2007-04-30 |  | 127d | 0d |  | Adopters | 24h |
| 507 | 2.7.4.2 | Developer review summary |  | 1d | 2007-05-01 | 2007-05-01 | 506 | 127d | 0d |  | Adopters | 8h |
| 508 | 2.7.4.3 | Adopter update summary |  | 1d | 2007-05-02 | 2007-05-02 | 507 | 127d | 0d |  | Adopters | 8h |
| 509 | 2.7.4.4 | Developer deliver C3PR summary to BAH (task 5.1.2) | milestone | 0d | 2007-05-02 | 2007-05-02 | 508 | 127d | 0d |  | Patrick |  |
| 510 | 2.7.4.5 | BAH review of C3PR summary (task 5.1.2) |  | 10d | 2007-05-03 | 2007-05-16 | 509 | 127d |  |  | BAH | 80h |
| 511 | 2.8 | **Demonstration** |  | 0d | 2007-05-14 | 2007-05-14 | 266 | 130d |  |  | Patrick; Ram; BAH |  |
| 512 | 2.8.1 | Demonstrate latest features to BAH | milestone | 0d | 2007-05-14 | 2007-05-14 | 266 | 130d |  | start no earlier than 2007-05-14 | Patrick; Ram; BAH |  |
| 513 | 2.8.2 | Demonstrate to the larger community | milestone | 0d | 2007-05-14 | 2007-05-14 | 266 | 130d |  | start no earlier than 2007-05-14 | Patrick; Ram; BAH |  |
| 514 | 2.9 | **Touchpoints** |  | 22d | 2007-04-02 | 2007-05-01 | 266 | 138d |  |  |  |  |
| 515 | 2.9.1 | Adopter review of deliverables |  | 22d | 2007-04-02 | 2007-05-01 |  | 138d |  |  |  |  |
| 516 | 2.9.2 | Adopter deployment of previous iteration codebase |  | 22d | 2007-04-02 | 2007-05-01 |  | 138d |  |  |  |  |

| ID | WBS | Task | Type | Duration | Start | Finish | Predecessors | Total slack | Free slack | Constraint |
| --- | --- | --- | --- | --- | --- | --- | --- | --- | --- | --- |
| 517 | 3 | **Iteration 3 (stratification, security, enrollment. multi-site study, study ammendments)** |  | 28d | 2007-05-02 | 2007-06-11 |  | 110d |  |  |
| 518 | 3.1 | Iteration start | milestone | 0d | 2007-05-02 | 2007-05-02 |  | 116d | 0d | start no earlier than 2007-05-02 |
| 519 | 3.2 | **Project management** |  | 22d | 2007-05-02 | 2007-05-31 | 518 | 116d |  |  |
| 520 | 3.2.1 | Update project plan |  | 22d | 2007-05-02 | 2007-05-31 |  | 116d |  |  |
| 521 | 3.2.2 | Update risk matrix |  | 22d | 2007-05-02 | 2007-05-31 |  | 116d |  |  |
| 522 | 3.2.3 | Monthly report |  | 22d | 2007-05-02 | 2007-05-31 |  | 116d |  |  |
| 523 | 3.3 | **Requirements and use cases** |  | 22d | 2007-05-02 | 2007-05-31 | 518 | 116d |  |  |
| 524 | 3.3.1 | Create level 1 use cases and requirements |  | 22d | 2007-05-02 | 2007-05-31 |  | 116d |  |  |
| 525 | 3.3.2 | Update use case document |  | 22d | 2007-05-02 | 2007-05-31 |  | 116d |  |  |
| 526 | 3.3.3 | Update requirements document |  | 22d | 2007-05-02 | 2007-05-31 |  | 116d |  |  |
| 527 | 3.4 | **Analysis and Design** |  | 22d | 2007-05-02 | 2007-05-31 | 518 | 116d |  |  |
| 528 | 3.4.1 | Perform level 1 design |  | 22d | 2007-05-02 | 2007-05-31 |  | 116d |  |  |
| 529 | 3.4.2 | Modeling |  | 22d | 2007-05-02 | 2007-05-31 |  | 116d |  |  |
| 530 | 3.4.3 | Systems design |  | 22d | 2007-05-02 | 2007-05-31 |  | 116d |  |  |
| 531 | 3.5 | **Implementation** |  | 22d | 2007-05-02 | 2007-05-31 | 518 | 116d |  |  |
| 532 | 3.5.1 | **Stratification** |  | 22d | 2007-05-02 | 2007-05-31 |  | 116d |  |  |
| 533 | 3.5.1.1 | First pass at stratification implementation |  | 22d | 2007-05-02 | 2007-05-31 |  | 116d |  |  |
| 534 | 3.5.2 | **Security** |  | 22d | 2007-05-02 | 2007-05-31 |  | 116d |  |  |
| 535 | 3.5.2.1 | Complete security implementation |  | 22d | 2007-05-02 | 2007-05-31 |  | 116d |  |  |
| 536 | 3.5.3 | **Enrollment** |  | 22d | 2007-05-02 | 2007-05-31 |  | 116d |  |  |
| 537 | 3.5.3.1 | **Enrollment details** |  | 22d | 2007-05-02 | 2007-05-31 |  | 116d |  |  |
| 538 | 3.5.3.1.1 | Treating MD |  | 22d | 2007-05-02 | 2007-05-31 |  | 116d |  |  |
| 539 | 3.5.3.1.2 | Disease |  | 22d | 2007-05-02 | 2007-05-31 |  | 116d |  |  |
| 540 | 3.5.3.1.3 | Compassionate |  | 22d | 2007-05-02 | 2007-05-31 |  | 116d |  |  |

| ID | WBS | Task | Duration | Start | Finish | Predecessors | Total slack |
| --- | --- | --- | --- | --- | --- | --- | --- |
| 541 | 3.5.3.2 | **Enrollment business rules** | 22d | 2007-05-02 | 2007-05-31 |  | 116d |
| 542 | 3.5.3.2.1 | Accrual ceilings | 22d | 2007-05-02 | 2007-05-31 |  | 116d |
| 543 | 3.5.3.2.2 | Notifications | 22d | 2007-05-02 | 2007-05-31 |  | 116d |
| 544 | 3.5.4 | **Multi-site study** | 22d | 2007-05-02 | 2007-05-31 |  | 116d |
| 545 | 3.5.4.1 | Complete multi-site study implementation | 22d | 2007-05-02 | 2007-05-31 |  | 116d |
| 546 | 3.5.5 | **Registration management** | 22d | 2007-05-02 | 2007-05-31 |  | 116d |
| 547 | 3.5.5.1 | Off study | 22d | 2007-05-02 | 2007-05-31 |  | 116d |
| 548 | 3.5.6 | **Study ammendments** | 22d | 2007-05-02 | 2007-05-31 |  | 116d |
| 549 | 3.5.6.1 | Change model, harmonize | 22d | 2007-05-02 | 2007-05-31 |  | 116d |
| 550 | 3.5.6.2 | Implement business rules | 22d | 2007-05-02 | 2007-05-31 |  | 116d |
| 551 | 3.6 | **Testing** | 22d | 2007-05-02 | 2007-05-31 | 518 | 116d |
| 552 | 3.6.1 | Developer testing | 22d | 2007-05-02 | 2007-05-31 |  | 116d |
| 553 | 3.6.2 | Adopter testing | 22d | 2007-05-02 | 2007-05-31 |  | 116d |
| 554 | 3.7 | **Documentation** | 22d | 2007-05-02 | 2007-05-31 | 518 | 116d |
| 555 | 3.7.1 | Installation guide | 22d | 2007-05-02 | 2007-05-31 |  | 116d |
| 556 | 3.7.2 | Administration guide | 22d | 2007-05-02 | 2007-05-31 |  | 116d |
| 557 | 3.7.3 | Release notes | 22d | 2007-05-02 | 2007-05-31 |  | 116d |
| 558 | 3.7.4 | Adopter summary of C3PR | 22d | 2007-05-02 | 2007-05-31 |  | 116d |
| 559 | 3.8 | **Support** | 22d | 2007-05-02 | 2007-05-31 | 518 | 116d |
| 560 | 3.8.1 | Adopter support | 22d | 2007-05-02 | 2007-05-31 |  | 116d |
| 561 | 3.8.2 | Bug fixing | 22d | 2007-05-02 | 2007-05-31 |  | 116d |
| 562 | 3.9 | **Touchpoints** | 22d | 2007-05-02 | 2007-05-31 | 518 | 116d |
| 563 | 3.9.1 | Adopter review of deliverables | 22d | 2007-05-02 | 2007-05-31 |  | 116d |
| 564 | 3.9.2 | Adopter deployment of previous iteration codebase | 22d | 2007-05-02 | 2007-05-31 |  | 116d |
| 565 | 3.9.3 | Contact mentors to review deliverables | 22d | 2007-05-02 | 2007-05-31 |  | 116d |

| ID | WBS | Task | Type | Duration | Start | Finish | Predecessors | Total slack | Free slack | Constraint | Resources |
| --- | --- | --- | --- | --- | --- | --- | --- | --- | --- | --- | --- |
| 566 | 3.10 | **Deliverables** |  | 22d | 2007-05-02 | 2007-05-31 | 518 | 116d |  |  |  |
| 567 | 3.10.1 | Risk matrix 1.4.x |  | 22d | 2007-05-02 | 2007-05-31 |  | 116d |  |  |  |
| 568 | 3.10.2 | Monthly report and risk matrix 1.3.x |  | 22d | 2007-05-02 | 2007-05-31 |  | 116d |  |  |  |
| 569 | 3.10.3 | Use case document (3.1.x) |  | 22d | 2007-05-02 | 2007-05-31 |  | 116d |  |  |  |
| 570 | 3.10.4 | Requirements document (3.2.x) |  | 22d | 2007-05-02 | 2007-05-31 |  | 116d |  |  |  |
| 571 | 3.10.5 | UML (3.3.x) |  | 22d | 2007-05-02 | 2007-05-31 |  | 116d |  |  |  |
| 572 | 3.10.6 | Design document (3.4.x) |  | 22d | 2007-05-02 | 2007-05-31 |  | 116d |  |  |  |
| 573 | 3.10.7 | Codebase (3.5.x) |  | 22d | 2007-05-02 | 2007-05-31 |  | 116d |  |  |  |
| 574 | 3.10.8 | Test plan (3.6.x, 5.4.x) |  | 22d | 2007-05-02 | 2007-05-31 |  | 116d |  |  |  |
| 575 | 3.10.9 | Test report (3.8.x) |  | 22d | 2007-05-02 | 2007-05-31 |  | 116d |  |  |  |
| 576 | 3.10.10 | Adopter test plan (5.5.x) |  | 22d | 2007-05-02 | 2007-05-31 |  | 116d |  |  |  |
| 577 | 3.10.11 | Adopter test report (5.6.x) |  | 22d | 2007-05-02 | 2007-05-31 |  | 116d |  |  |  |
| 578 | 3.10.12 | Installation guide (3.10.x) |  | 22d | 2007-05-02 | 2007-05-31 |  | 116d |  |  |  |
| 579 | 3.10.13 | Administration guide (3.13.x) |  | 22d | 2007-05-02 | 2007-05-31 |  | 116d |  |  |  |
| 580 | 3.10.14 | Release notes (3.14.x) |  | 22d | 2007-05-02 | 2007-05-31 |  | 116d |  |  |  |
| 581 | 3.10.15 | Adopter summary of C3PR (5.1.x) |  | 22d | 2007-05-02 | 2007-05-31 |  | 116d |  |  |  |
| 582 | 3.11 | **Demonstration** |  | 0d | 2007-06-11 | 2007-06-11 | 518 | 110d |  |  | Patrick; Ram; BAH |
| 583 | 3.11.1 | Demonstrate latest features to BAH | milestone | 0d | 2007-06-11 | 2007-06-11 | 518 | 110d |  | start no earlier than 2007-06-11 | Patrick; Ram; BAH |
| 584 | 4 | **Iteration 4 (stratification, enrollment, randomization, reporting, legacy systems)** |  | 26d | 2007-06-01 | 2007-07-09 |  | 90d |  |  |  |
| 585 | 4.1 | Iteration start | milestone | 0d | 2007-06-01 | 2007-06-01 |  | 95d | 0d | start no earlier than 2007-06-01 |  |
| 586 | 4.2 | **Project management** |  | 21d | 2007-06-01 | 2007-06-29 | 585 | 95d |  |  |  |
| 587 | 4.2.1 | Update project plan |  | 21d | 2007-06-01 | 2007-06-29 |  | 95d |  |  |  |
| 588 | 4.2.2 | Update risk matrix |  | 21d | 2007-06-01 | 2007-06-29 |  | 95d |  |  |  |
| 589 | 4.2.3 | Monthly report |  | 21d | 2007-06-01 | 2007-06-29 |  | 95d |  |  |  |

| ID | WBS | Task | Duration | Start | Finish | Predecessors | Total slack |
| --- | --- | --- | --- | --- | --- | --- | --- |
| 590 | 4.3 | **Requirements and use cases** | 21d | 2007-06-01 | 2007-06-29 | 585 | 95d |
| 591 | 4.3.1 | Create level 1 use cases and requirements | 21d | 2007-06-01 | 2007-06-29 |  | 95d |
| 592 | 4.3.2 | Update use case document | 21d | 2007-06-01 | 2007-06-29 |  | 95d |
| 593 | 4.3.3 | Update requirements document | 21d | 2007-06-01 | 2007-06-29 |  | 95d |
| 594 | 4.4 | **Analysis and Design** | 21d | 2007-06-01 | 2007-06-29 | 585 | 95d |
| 595 | 4.4.1 | Perform level 1 design | 21d | 2007-06-01 | 2007-06-29 |  | 95d |
| 596 | 4.4.2 | Modeling | 21d | 2007-06-01 | 2007-06-29 |  | 95d |
| 597 | 4.4.3 | Systems design | 21d | 2007-06-01 | 2007-06-29 |  | 95d |
| 598 | 4.5 | **Implementation** | 21d | 2007-06-01 | 2007-06-29 | 585 | 95d |
| 599 | 4.5.1 | **Stratification** | 21d | 2007-06-01 | 2007-06-29 |  | 95d |
| 600 | 4.5.1.1 | Finalize stratification implementation | 21d | 2007-06-01 | 2007-06-29 |  | 95d |
| 601 | 4.5.2 | **Enrollment** | 21d | 2007-06-01 | 2007-06-29 |  | 95d |
| 602 | 4.5.2.1 | **Enrollment details** | 21d | 2007-06-01 | 2007-06-29 |  | 95d |
| 603 | 4.5.2.1.1 | Finalize enrollment details | 21d | 2007-06-01 | 2007-06-29 |  | 95d |
| 604 | 4.5.2.2 | **Enrollment business rules** | 21d | 2007-06-01 | 2007-06-29 |  | 95d |
| 605 | 4.5.2.2.1 | Finalize enrollment business rules | 21d | 2007-06-01 | 2007-06-29 |  | 95d |
| 606 | 4.5.3 | **Randomization** | 21d | 2007-06-01 | 2007-06-29 |  | 95d |
| 607 | 4.5.3.1 | Begin interfacing with Randomization Hub | 21d | 2007-06-01 | 2007-06-29 |  | 95d |
| 608 | 4.5.3.2 | Randomization book | 21d | 2007-06-01 | 2007-06-29 |  | 95d |
| 609 | 4.5.4 | **Reporting** | 21d | 2007-06-01 | 2007-06-29 |  | 95d |
| 610 | 4.5.4.1 | Reporting interface | 21d | 2007-06-01 | 2007-06-29 |  | 95d |
| 611 | 4.5.5 | **Legacy systems** | 21d | 2007-06-01 | 2007-06-29 |  | 95d |
| 612 | 4.5.5.1 | Investigate legacy systems at Adopter sites | 21d | 2007-06-01 | 2007-06-29 |  | 95d |
| 613 | 4.5.5.2 | Investigate support of legacy systems (APIs, files, etc.) | 21d | 2007-06-01 | 2007-06-29 |  | 95d |

| ID | WBS | Task | Duration | Start | Finish | Predecessors | Total slack |
| --- | --- | --- | --- | --- | --- | --- | --- |
| 614 | 4.6 | **Testing** | 21d | 2007-06-01 | 2007-06-29 | 585 | 95d |
| 615 | 4.6.1 | Developer testing | 21d | 2007-06-01 | 2007-06-29 |  | 95d |
| 616 | 4.6.2 | Adopter testing | 21d | 2007-06-01 | 2007-06-29 |  | 95d |
| 617 | 4.7 | **Documentation** | 21d | 2007-06-01 | 2007-06-29 | 585 | 95d |
| 618 | 4.7.1 | Installation guide | 21d | 2007-06-01 | 2007-06-29 |  | 95d |
| 619 | 4.7.2 | Administration guide | 21d | 2007-06-01 | 2007-06-29 |  | 95d |
| 620 | 4.7.3 | Release notes | 21d | 2007-06-01 | 2007-06-29 |  | 95d |
| 621 | 4.7.4 | Adopter summary of C3PR | 21d | 2007-06-01 | 2007-06-29 |  | 95d |
| 622 | 4.8 | **Support** | 21d | 2007-06-01 | 2007-06-29 | 585 | 95d |
| 623 | 4.8.1 | Adopter support | 21d | 2007-06-01 | 2007-06-29 |  | 95d |
| 624 | 4.8.2 | Bug fixing | 21d | 2007-06-01 | 2007-06-29 |  | 95d |
| 625 | 4.9 | **Touchpoints** | 21d | 2007-06-01 | 2007-06-29 | 585 | 95d |
| 626 | 4.9.1 | Adopter review of deliverables | 21d | 2007-06-01 | 2007-06-29 |  | 95d |
| 627 | 4.9.2 | Adopter deployment of previous iteration codebase | 21d | 2007-06-01 | 2007-06-29 |  | 95d |
| 628 | 4.9.3 | Complete mentor review of deliverables | 21d | 2007-06-01 | 2007-06-29 |  | 95d |
| 629 | 4.10 | **Deliverables** | 21d | 2007-06-01 | 2007-06-29 | 585 | 95d |
| 630 | 4.10.1 | Risk matrix 1.4.x | 21d | 2007-06-01 | 2007-06-29 |  | 95d |
| 631 | 4.10.2 | Monthly report and risk matrix 1.3.x | 21d | 2007-06-01 | 2007-06-29 |  | 95d |
| 632 | 4.10.3 | Use case document (3.1.x) | 21d | 2007-06-01 | 2007-06-29 |  | 95d |
| 633 | 4.10.4 | Requirements document (3.2.x) | 21d | 2007-06-01 | 2007-06-29 |  | 95d |
| 634 | 4.10.5 | UML (3.3.x) | 21d | 2007-06-01 | 2007-06-29 |  | 95d |
| 635 | 4.10.6 | Design document (3.4.x) | 21d | 2007-06-01 | 2007-06-29 |  | 95d |
| 636 | 4.10.7 | Codebase (3.5.x) | 21d | 2007-06-01 | 2007-06-29 |  | 95d |
| 637 | 4.10.8 | Test plan (3.6.x, 5.4.x) | 21d | 2007-06-01 | 2007-06-29 |  | 95d |
| 638 | 4.10.9 | Test report (3.8.x) | 21d | 2007-06-01 | 2007-06-29 |  | 95d |
| 639 | 4.10.10 | Adopter test plan (5.5.x) | 21d | 2007-06-01 | 2007-06-29 |  | 95d |
| 640 | 4.10.11 | Adopter test report (5.6.x) | 21d | 2007-06-01 | 2007-06-29 |  | 95d |
| 641 | 4.10.12 | Installation guide (3.10.x) | 21d | 2007-06-01 | 2007-06-29 |  | 95d |
| 642 | 4.10.13 | Administration guide (3.13.x) | 21d | 2007-06-01 | 2007-06-29 |  | 95d |
| 643 | 4.10.14 | Release notes (3.14.x) | 21d | 2007-06-01 | 2007-06-29 |  | 95d |
| 644 | 4.10.15 | Adopter summary of C3PR (5.1.x) | 21d | 2007-06-01 | 2007-06-29 |  | 95d |

| ID | WBS | Task | Type | Duration | Start | Finish | Predecessors | Total slack | Free slack | Constraint | Resources |
| --- | --- | --- | --- | --- | --- | --- | --- | --- | --- | --- | --- |
| 645 | 4.11 | **Demonstration** |  | 0d | 2007-07-09 | 2007-07-09 | 585 | 90d |  |  | Patrick; Ram; BAH |
| 646 | 4.11.1 | Demonstrate latest features to BAH | milestone | 0d | 2007-07-09 | 2007-07-09 | 585 | 90d |  | start no earlier than 2007-07-09 | Patrick; Ram; BAH |
| 647 | 4.11.2 | Demonstrate to the larger community | milestone | 0d | 2007-07-09 | 2007-07-09 | 585 | 90d |  | start no earlier than 2007-07-09 | Patrick; Ram; BAH |
| 648 | 5 | **Iteration 5 (randomization, reporting, legacy systems, semantic integration, BRIDG)** |  | 30d | 2007-07-02 | 2007-08-13 |  | 65d |  |  |  |
| 649 | 5.1 | Iteration start | milestone | 0d | 2007-07-02 | 2007-07-02 |  | 73d | 0d | start no earlier than 2007-07-02 |  |
| 650 | 5.2 | **Project management** |  | 22d | 2007-07-02 | 2007-07-31 | 649 | 73d |  |  |  |
| 651 | 5.2.1 | Update project plan |  | 22d | 2007-07-02 | 2007-07-31 |  | 73d |  |  |  |
| 652 | 5.2.2 | Update risk matrix |  | 22d | 2007-07-02 | 2007-07-31 |  | 73d |  |  |  |
| 653 | 5.2.3 | Monthly report |  | 22d | 2007-07-02 | 2007-07-31 |  | 73d |  |  |  |
| 654 | 5.3 | **Requirements and use cases** |  | 22d | 2007-07-02 | 2007-07-31 | 649 | 73d |  |  |  |
| 655 | 5.3.1 | Create level 1 use cases and requirements |  | 22d | 2007-07-02 | 2007-07-31 |  | 73d |  |  |  |
| 656 | 5.3.2 | Update use case document |  | 22d | 2007-07-02 | 2007-07-31 |  | 73d |  |  |  |
| 657 | 5.3.3 | Update requirements document |  | 22d | 2007-07-02 | 2007-07-31 |  | 73d |  |  |  |
| 658 | 5.4 | **Analysis and Design** |  | 22d | 2007-07-02 | 2007-07-31 | 649 | 73d |  |  |  |
| 659 | 5.4.1 | Perform level 1 design |  | 22d | 2007-07-02 | 2007-07-31 |  | 73d |  |  |  |
| 660 | 5.4.2 | Modeling |  | 22d | 2007-07-02 | 2007-07-31 |  | 73d |  |  |  |
| 661 | 5.4.3 | Systems design |  | 22d | 2007-07-02 | 2007-07-31 |  | 73d |  |  |  |
| 662 | 5.5 | **Implementation** |  | 22d | 2007-07-02 | 2007-07-31 |  | 73d |  |  |  |
| 663 | 5.5.1 | **Randomization** |  | 22d | 2007-07-02 | 2007-07-31 | 649 | 73d |  |  |  |
| 664 | 5.5.1.1 | Randomization email |  | 22d | 2007-07-02 | 2007-07-31 |  | 73d |  |  |  |
| 665 | 5.5.2 | **Reporting** |  | 22d | 2007-07-02 | 2007-07-31 | 649 | 73d |  |  |  |
| 666 | 5.5.2.1 | Storing reports |  | 22d | 2007-07-02 | 2007-07-31 |  | 73d |  |  |  |
| 667 | 5.5.3 | **Legacy systems** |  | 22d | 2007-07-02 | 2007-07-31 | 649 | 73d |  |  |  |
| 668 | 5.5.3.1 | Implement legacy support for adopters |  | 22d | 2007-07-02 | 2007-07-31 |  | 73d |  |  |  |
| 669 | 5.5.3.2 | Implement generic support for legacy systems |  | 22d | 2007-07-02 | 2007-07-31 |  | 73d |  |  |  |

| ID | WBS | Task | Duration | Start | Finish | Predecessors | Total slack |
| --- | --- | --- | --- | --- | --- | --- | --- |
| 670 | 5.6 | **Testing** | 22d | 2007-07-02 | 2007-07-31 | 649 | 73d |
| 671 | 5.6.1 | Developer testing | 22d | 2007-07-02 | 2007-07-31 |  | 73d |
| 672 | 5.6.2 | Adopter testing | 22d | 2007-07-02 | 2007-07-31 |  | 73d |
| 673 | 5.7 | **Documentation** | 22d | 2007-07-02 | 2007-07-31 | 649 | 73d |
| 674 | 5.7.1 | Installation guide | 22d | 2007-07-02 | 2007-07-31 |  | 73d |
| 675 | 5.7.2 | Administration guide | 22d | 2007-07-02 | 2007-07-31 |  | 73d |
| 676 | 5.7.3 | Release notes | 22d | 2007-07-02 | 2007-07-31 |  | 73d |
| 677 | 5.7.4 | Adopter summary of C3PR | 22d | 2007-07-02 | 2007-07-31 |  | 73d |
| 678 | 5.8 | **Support** | 22d | 2007-07-02 | 2007-07-31 | 649 | 73d |
| 679 | 5.8.1 | Adopter support | 22d | 2007-07-02 | 2007-07-31 |  | 73d |
| 680 | 5.8.2 | Bug fixing | 22d | 2007-07-02 | 2007-07-31 |  | 73d |
| 681 | 5.9 | **Touchpoints** | 22d | 2007-07-02 | 2007-07-31 | 649 | 73d |
| 682 | 5.9.1 | Adopter review of deliverables | 22d | 2007-07-02 | 2007-07-31 |  | 73d |
| 683 | 5.9.2 | Adopter deployment of previous iteration codebase | 22d | 2007-07-02 | 2007-07-31 |  | 73d |
| 684 | 5.9.3 | Begin semantic integration with the caDSR and EVS | 22d | 2007-07-02 | 2007-07-31 |  | 73d |
| 685 | 5.9.4 | Begin BRIDG review | 22d | 2007-07-02 | 2007-07-31 | 649 | 73d |
| 686 | 5.10 | **Deliverables** | 22d | 2007-07-02 | 2007-07-31 | 649 | 73d |
| 687 | 5.10.1 | Risk matrix 1.4.x | 22d | 2007-07-02 | 2007-07-31 |  | 73d |
| 688 | 5.10.2 | Monthly report and risk matrix 1.3.x | 22d | 2007-07-02 | 2007-07-31 |  | 73d |
| 689 | 5.10.3 | Use case document (3.1.x) | 22d | 2007-07-02 | 2007-07-31 |  | 73d |
| 690 | 5.10.4 | Requirements document (3.2.x) | 22d | 2007-07-02 | 2007-07-31 |  | 73d |
| 691 | 5.10.5 | UML (3.3.x) | 22d | 2007-07-02 | 2007-07-31 |  | 73d |
| 692 | 5.10.6 | Design document (3.4.x) | 22d | 2007-07-02 | 2007-07-31 |  | 73d |
| 693 | 5.10.7 | Codebase (3.5.x) | 22d | 2007-07-02 | 2007-07-31 |  | 73d |
| 694 | 5.10.8 | Test plan (3.6.x, 5.4.x) | 22d | 2007-07-02 | 2007-07-31 |  | 73d |
| 695 | 5.10.9 | Test report (3.8.x) | 22d | 2007-07-02 | 2007-07-31 |  | 73d |
| 696 | 5.10.10 | Adopter test plan (5.5.x) | 22d | 2007-07-02 | 2007-07-31 |  | 73d |
| 697 | 5.10.11 | Adopter test report (5.6.x) | 22d | 2007-07-02 | 2007-07-31 |  | 73d |
| 698 | 5.10.12 | Installation guide (3.10.x) | 22d | 2007-07-02 | 2007-07-31 |  | 73d |
| 699 | 5.10.13 | Administration guide (3.13.x) | 22d | 2007-07-02 | 2007-07-31 |  | 73d |
| 700 | 5.10.14 | Release notes (3.14.x) | 22d | 2007-07-02 | 2007-07-31 |  | 73d |
| 701 | 5.10.15 | Adopter summary of C3PR (5.1.x) | 22d | 2007-07-02 | 2007-07-31 |  | 73d |

| ID | WBS | Task | Type | Duration | Start | Finish | Predecessors | Total slack | Free slack | Constraint | Resources |
| --- | --- | --- | --- | --- | --- | --- | --- | --- | --- | --- | --- |
| 702 | 5.11 | **Demonstration** |  | 0d | 2007-08-13 | 2007-08-13 | 649 | 65d |  |  | Patrick; Ram; BAH |
| 703 | 5.11.1 | Demonstrate latest features to BAH | milestone | 0d | 2007-08-13 | 2007-08-13 | 649 | 65d |  | start no earlier than 2007-08-13 | Patrick; Ram; BAH |
| 704 | 6 | **Iteration 6 (randomization, reporting, legacy systems, semantic integration, BRIDG)** |  | 28d | 2007-08-01 | 2007-09-10 |  | 45d |  |  |  |
| 705 | 6.1 | Iteration start | milestone | 0d | 2007-08-01 | 2007-08-01 |  | 50d | 0d | start no earlier than 2007-08-01 |  |
| 706 | 6.2 | **Project management** |  | 23d | 2007-08-01 | 2007-08-31 | 705 | 50d |  |  |  |
| 707 | 6.2.1 | Update project plan |  | 23d | 2007-08-01 | 2007-08-31 |  | 50d |  |  |  |
| 708 | 6.2.2 | Update risk matrix |  | 23d | 2007-08-01 | 2007-08-31 |  | 50d |  |  |  |
| 709 | 6.2.3 | Monthly report |  | 23d | 2007-08-01 | 2007-08-31 |  | 50d |  |  |  |
| 710 | 6.3 | **Requirements and use cases** |  | 23d | 2007-08-01 | 2007-08-31 | 705 | 50d |  |  |  |
| 711 | 6.3.1 | Create level 1 use cases and requirements |  | 23d | 2007-08-01 | 2007-08-31 |  | 50d |  |  |  |
| 712 | 6.3.2 | Update use case document |  | 23d | 2007-08-01 | 2007-08-31 |  | 50d |  |  |  |
| 713 | 6.3.3 | Update requirements document |  | 23d | 2007-08-01 | 2007-08-31 |  | 50d |  |  |  |
| 714 | 6.4 | **Analysis and Design** |  | 23d | 2007-08-01 | 2007-08-31 | 705 | 50d |  |  |  |
| 715 | 6.4.1 | Perform level 1 design |  | 23d | 2007-08-01 | 2007-08-31 |  | 50d |  |  |  |
| 716 | 6.4.2 | Modeling |  | 23d | 2007-08-01 | 2007-08-31 |  | 50d |  |  |  |
| 717 | 6.4.3 | Systems design |  | 23d | 2007-08-01 | 2007-08-31 |  | 50d |  |  |  |
| 718 | 6.5 | **Implementation** |  | 23d | 2007-08-01 | 2007-08-31 | 705 | 50d |  |  |  |
| 719 | 6.5.1 | **Randomization** |  | 23d | 2007-08-01 | 2007-08-31 |  | 50d |  |  |  |
| 720 | 6.5.1.1 | Randomization call-out |  | 23d | 2007-08-01 | 2007-08-31 |  | 50d |  |  |  |
| 721 | 6.5.2 | **Reporting** |  | 23d | 2007-08-01 | 2007-08-31 |  | 50d |  |  |  |
| 722 | 6.5.2.1 | Finalize reporting |  | 23d | 2007-08-01 | 2007-08-31 |  | 50d |  |  |  |
| 723 | 6.5.3 | **Legacy systems** |  | 23d | 2007-08-01 | 2007-08-31 |  | 50d |  |  |  |
| 724 | 6.5.3.1 | Finalize legacy systems |  | 23d | 2007-08-01 | 2007-08-31 |  | 50d |  |  |  |
| 725 | 6.6 | **Testing** |  | 23d | 2007-08-01 | 2007-08-31 | 705 | 50d |  |  |  |
| 726 | 6.6.1 | Developer testing |  | 23d | 2007-08-01 | 2007-08-31 |  | 50d |  |  |  |
| 727 | 6.6.2 | Adopter testing |  | 23d | 2007-08-01 | 2007-08-31 |  | 50d |  |  |  |

| ID | WBS | Task | Duration | Start | Finish | Predecessors | Total slack |
| --- | --- | --- | --- | --- | --- | --- | --- |
| 728 | 6.7 | **Documentation** | 23d | 2007-08-01 | 2007-08-31 | 705 | 50d |
| 729 | 6.7.1 | Installation guide | 23d | 2007-08-01 | 2007-08-31 |  | 50d |
| 730 | 6.7.2 | Administration guide | 23d | 2007-08-01 | 2007-08-31 |  | 50d |
| 731 | 6.7.3 | Release notes | 23d | 2007-08-01 | 2007-08-31 |  | 50d |
| 732 | 6.7.4 | Adopter summary of C3PR | 23d | 2007-08-01 | 2007-08-31 |  | 50d |
| 733 | 6.8 | **Support** | 23d | 2007-08-01 | 2007-08-31 | 705 | 50d |
| 734 | 6.8.1 | Adopter support | 23d | 2007-08-01 | 2007-08-31 |  | 50d |
| 735 | 6.8.2 | Bug fixing | 23d | 2007-08-01 | 2007-08-31 |  | 50d |
| 736 | 6.9 | **Touchpoints** | 23d | 2007-08-01 | 2007-08-31 | 705 | 50d |
| 737 | 6.9.1 | Adopter review of deliverables | 23d | 2007-08-01 | 2007-08-31 |  | 50d |
| 738 | 6.9.2 | Adopter deployment of previous iteration codebase | 23d | 2007-08-01 | 2007-08-31 |  | 50d |
| 739 | 6.9.3 | Complete semantic integration with the caDSR and EVS | 23d | 2007-08-01 | 2007-08-31 |  | 50d |
| 740 | 6.9.4 | Complete BRIDG review | 23d | 2007-08-01 | 2007-08-31 |  | 50d |
| 741 | 6.10 | **Deliverables** | 23d | 2007-08-01 | 2007-08-31 | 705 | 50d |
| 742 | 6.10.1 | Risk matrix 1.4.x | 23d | 2007-08-01 | 2007-08-31 |  | 50d |
| 743 | 6.10.2 | Monthly report and risk matrix 1.3.x | 23d | 2007-08-01 | 2007-08-31 |  | 50d |
| 744 | 6.10.3 | Use case document (3.1.x) | 23d | 2007-08-01 | 2007-08-31 |  | 50d |
| 745 | 6.10.4 | Requirements document (3.2.x) | 23d | 2007-08-01 | 2007-08-31 |  | 50d |
| 746 | 6.10.5 | UML (3.3.x) | 23d | 2007-08-01 | 2007-08-31 |  | 50d |
| 747 | 6.10.6 | Design document (3.4.x) | 23d | 2007-08-01 | 2007-08-31 |  | 50d |
| 748 | 6.10.7 | Codebase (3.5.x) | 23d | 2007-08-01 | 2007-08-31 |  | 50d |
| 749 | 6.10.8 | Test plan (3.6.x, 5.4.x) | 23d | 2007-08-01 | 2007-08-31 |  | 50d |
| 750 | 6.10.9 | Test report (3.8.x) | 23d | 2007-08-01 | 2007-08-31 |  | 50d |
| 751 | 6.10.10 | Adopter test plan (5.5.x) | 23d | 2007-08-01 | 2007-08-31 |  | 50d |
| 752 | 6.10.11 | Adopter test report (5.6.x) | 23d | 2007-08-01 | 2007-08-31 |  | 50d |
| 753 | 6.10.12 | Installation guide (3.10.x) | 23d | 2007-08-01 | 2007-08-31 |  | 50d |
| 754 | 6.10.13 | Administration guide (3.13.x) | 23d | 2007-08-01 | 2007-08-31 |  | 50d |
| 755 | 6.10.14 | Release notes (3.14.x) | 23d | 2007-08-01 | 2007-08-31 |  | 50d |
| 756 | 6.10.15 | Adopter summary of C3PR (5.1.x) | 23d | 2007-08-01 | 2007-08-31 |  | 50d |

| ID | WBS | Task | Type | Duration | Start | Finish | Predecessors | Total slack | Free slack | Constraint | Resources |
| --- | --- | --- | --- | --- | --- | --- | --- | --- | --- | --- | --- |
| 757 | 6.11 | **Demonstration** |  | 0d | 2007-09-10 | 2007-09-10 | 705 | 45d |  |  | Patrick; Ram; BAH |
| 758 | 6.11.1 | Demonstrate latest features to BAH | milestone | 0d | 2007-09-10 | 2007-09-10 | 705 | 45d | 0d | start no earlier than 2007-09-10 | Patrick; Ram; BAH |
| 759 | 6.11.2 | Demonstrate to the larger community | milestone | 0d | 2007-09-10 | 2007-09-10 | 758 | 45d |  |  | Patrick; Ram; BAH |
| 760 | 7 | **Iteration 7 (installer, silver review)** |  | 25d | 2007-09-03 | 2007-10-08 |  | 25d |  |  |  |
| 761 | 7.1 | Iteration start | milestone | 0d | 2007-09-03 | 2007-09-03 |  | 30d | 0d | start no earlier than 2007-09-03 |  |
| 762 | 7.2 | **Project management** |  | 20d | 2007-09-03 | 2007-09-28 | 761 | 30d |  |  |  |
| 763 | 7.2.1 | Update project plan |  | 20d | 2007-09-03 | 2007-09-28 |  | 30d |  |  |  |
| 764 | 7.2.2 | Update risk matrix |  | 20d | 2007-09-03 | 2007-09-28 |  | 30d |  |  |  |
| 765 | 7.2.3 | Monthly report |  | 20d | 2007-09-03 | 2007-09-28 |  | 30d |  |  |  |
| 766 | 7.3 | **Requirements and use cases** |  | 10d | 2007-09-03 | 2007-09-14 | 761 | 40d |  |  |  |
| 767 | 7.3.1 | Create level 1 use cases and requirements |  | 10d | 2007-09-03 | 2007-09-14 |  | 40d |  |  |  |
| 768 | 7.3.2 | Update use case document |  | 10d | 2007-09-03 | 2007-09-14 |  | 40d |  |  |  |
| 769 | 7.3.3 | Update requirements document |  | 10d | 2007-09-03 | 2007-09-14 |  | 40d |  |  |  |
| 770 | 7.4 | **Analysis and Design** |  | 10d | 2007-09-03 | 2007-09-14 | 761 | 40d |  |  |  |
| 771 | 7.4.1 | Perform level 1 design |  | 10d | 2007-09-03 | 2007-09-14 |  | 40d |  |  |  |
| 772 | 7.4.2 | Modeling |  | 10d | 2007-09-03 | 2007-09-14 |  | 40d |  |  |  |
| 773 | 7.4.3 | Systems design |  | 10d | 2007-09-03 | 2007-09-14 |  | 40d |  |  |  |
| 774 | 7.5 | Implementation |  | 10d | 2007-09-03 | 2007-09-14 | 761 | 40d |  |  |  |
| 775 | 7.6 | **Testing** |  | 20d | 2007-09-03 | 2007-09-28 | 761 | 30d |  |  |  |
| 776 | 7.6.1 | Developer testing |  | 20d | 2007-09-03 | 2007-09-28 |  | 30d |  |  |  |
| 777 | 7.6.2 | Adopter testing |  | 20d | 2007-09-03 | 2007-09-28 |  | 30d |  |  |  |
| 778 | 7.7 | **Documentation** |  | 20d | 2007-09-03 | 2007-09-28 | 761 | 30d |  |  |  |
| 779 | 7.7.1 | Installation guide |  | 20d | 2007-09-03 | 2007-09-28 |  | 30d |  |  |  |
| 780 | 7.7.2 | Administration guide |  | 20d | 2007-09-03 | 2007-09-28 |  | 30d |  |  |  |
| 781 | 7.7.3 | Release notes |  | 20d | 2007-09-03 | 2007-09-28 |  | 30d |  |  |  |
| 782 | 7.7.4 | Adopter summary of C3PR |  | 20d | 2007-09-03 | 2007-09-28 |  | 30d |  |  |  |

| ID | WBS | Task | Type | Duration | Start | Finish | Predecessors | Total slack | Constraint | Resources |
| --- | --- | --- | --- | --- | --- | --- | --- | --- | --- | --- |
| 783 | 7.8 | **Support** |  | 20d | 2007-09-03 | 2007-09-28 | 761 | 30d |  |  |
| 784 | 7.8.1 | Adopter support |  | 20d | 2007-09-03 | 2007-09-28 |  | 30d |  |  |
| 785 | 7.8.2 | Bug fixing |  | 20d | 2007-09-03 | 2007-09-28 |  | 30d |  |  |
| 786 | 7.9 | **Touchpoints** |  | 20d | 2007-09-03 | 2007-09-28 | 761 | 30d |  |  |
| 787 | 7.9.1 | Adopter review of deliverables |  | 20d | 2007-09-03 | 2007-09-28 |  | 30d |  |  |
| 788 | 7.9.2 | Adopter deployment of previous iteration codebase |  | 20d | 2007-09-03 | 2007-09-28 |  | 30d |  |  |
| 789 | 7.9.3 | Begin silver review |  | 20d | 2007-09-03 | 2007-09-28 |  | 30d |  |  |
| 790 | 7.10 | **Deliverables** |  | 20d | 2007-09-03 | 2007-09-28 | 761 | 30d |  |  |
| 791 | 7.10.1 | Risk matrix 1.4.x |  | 20d | 2007-09-03 | 2007-09-28 |  | 30d |  |  |
| 792 | 7.10.2 | Monthly report and risk matrix 1.3.x |  | 20d | 2007-09-03 | 2007-09-28 |  | 30d |  |  |
| 793 | 7.10.3 | Use case document (3.1.x) |  | 20d | 2007-09-03 | 2007-09-28 |  | 30d |  |  |
| 794 | 7.10.4 | Requirements document (3.2.x) |  | 20d | 2007-09-03 | 2007-09-28 |  | 30d |  |  |
| 795 | 7.10.5 | UML (3.3.x) |  | 20d | 2007-09-03 | 2007-09-28 |  | 30d |  |  |
| 796 | 7.10.6 | Design document (3.4.x) |  | 20d | 2007-09-03 | 2007-09-28 |  | 30d |  |  |
| 797 | 7.10.7 | Codebase (3.5.x) |  | 20d | 2007-09-03 | 2007-09-28 |  | 30d |  |  |
| 798 | 7.10.8 | Test plan (3.6.x, 5.4.x) |  | 20d | 2007-09-03 | 2007-09-28 |  | 30d |  |  |
| 799 | 7.10.9 | Test report (3.8.x) |  | 20d | 2007-09-03 | 2007-09-28 |  | 30d |  |  |
| 800 | 7.10.10 | Adopter test plan (5.5.x) |  | 20d | 2007-09-03 | 2007-09-28 |  | 30d |  |  |
| 801 | 7.10.11 | Adopter test report (5.6.x) |  | 20d | 2007-09-03 | 2007-09-28 |  | 30d |  |  |
| 802 | 7.10.12 | Installation guide (3.10.x) |  | 20d | 2007-09-03 | 2007-09-28 |  | 30d |  |  |
| 803 | 7.10.13 | Administration guide (3.13.x) |  | 20d | 2007-09-03 | 2007-09-28 |  | 30d |  |  |
| 804 | 7.10.14 | Release notes (3.14.x) |  | 20d | 2007-09-03 | 2007-09-28 |  | 30d |  |  |
| 805 | 7.10.15 | Adopter summary of C3PR (5.1.x) |  | 20d | 2007-09-03 | 2007-09-28 |  | 30d |  |  |
| 806 | 7.11 | **Demonstration** |  | 0d | 2007-10-08 | 2007-10-08 | 761 | 25d |  | Patrick; Ram; BAH |
| 807 | 7.11.1 | Demonstrate latest features to BAH | milestone | 0d | 2007-10-08 | 2007-10-08 | 761 | 25d | start no earlier than 2007-10-08 | Patrick; Ram; BAH |

| ID | WBS | Task | Type | Duration | Start | Finish | Predecessors | Total slack | Free slack | Constraint |
| --- | --- | --- | --- | --- | --- | --- | --- | --- | --- | --- |
| 808 | 8 | **Iteration 8 (silver review)** |  | 30d | 2007-10-01 | 2007-11-12 |  | 0d |  |  |
| 809 | 8.1 | Iteration start | milestone | 0d | 2007-10-01 | 2007-10-01 |  | 7d | 0d | start no earlier than 2007-10-01 |
| 810 | 8.2 | **Project management** |  | 23d | 2007-10-01 | 2007-10-31 | 809 | 7d |  |  |
| 811 | 8.2.1 | Update project plan |  | 23d | 2007-10-01 | 2007-10-31 |  | 7d |  |  |
| 812 | 8.2.2 | Update risk matrix |  | 23d | 2007-10-01 | 2007-10-31 |  | 7d |  |  |
| 813 | 8.2.3 | Monthly report |  | 23d | 2007-10-01 | 2007-10-31 |  | 7d |  |  |
| 814 | 8.3 | **Requirements and use cases** |  | 10d | 2007-10-01 | 2007-10-12 | 809 | 20d |  |  |
| 815 | 8.3.1 | Create level 1 use cases and requirements |  | 10d | 2007-10-01 | 2007-10-12 |  | 20d |  |  |
| 816 | 8.3.2 | Update use case document |  | 10d | 2007-10-01 | 2007-10-12 |  | 20d |  |  |
| 817 | 8.3.3 | Update requirements document |  | 10d | 2007-10-01 | 2007-10-12 |  | 20d |  |  |
| 818 | 8.4 | **Analysis and Design** |  | 10d | 2007-10-01 | 2007-10-12 | 809 | 20d |  |  |
| 819 | 8.4.1 | Perform level 1 design |  | 10d | 2007-10-01 | 2007-10-12 |  | 20d |  |  |
| 820 | 8.4.2 | Modeling |  | 10d | 2007-10-01 | 2007-10-12 |  | 20d |  |  |
| 821 | 8.4.3 | Systems design |  | 10d | 2007-10-01 | 2007-10-12 |  | 20d |  |  |
| 822 | 8.5 | Implementation |  | 10d | 2007-10-01 | 2007-10-12 | 809 | 20d |  |  |
| 823 | 8.6 | **Testing** |  | 23d | 2007-10-01 | 2007-10-31 | 809 | 7d |  |  |
| 824 | 8.6.1 | Developer testing |  | 23d | 2007-10-01 | 2007-10-31 |  | 7d |  |  |
| 825 | 8.6.2 | Adopter testing |  | 23d | 2007-10-01 | 2007-10-31 |  | 7d |  |  |
| 826 | 8.7 | **Documentation** |  | 23d | 2007-10-01 | 2007-10-31 | 809 | 7d |  |  |
| 827 | 8.7.1 | Installation guide |  | 23d | 2007-10-01 | 2007-10-31 |  | 7d |  |  |
| 828 | 8.7.2 | Administration guide |  | 23d | 2007-10-01 | 2007-10-31 |  | 7d |  |  |
| 829 | 8.7.3 | Release notes |  | 23d | 2007-10-01 | 2007-10-31 |  | 7d |  |  |
| 830 | 8.7.4 | Adopter summary of C3PR |  | 23d | 2007-10-01 | 2007-10-31 |  | 7d |  |  |
| 831 | 8.8 | **Support** |  | 23d | 2007-10-01 | 2007-10-31 | 809 | 7d |  |  |
| 832 | 8.8.1 | Adopter support |  | 23d | 2007-10-01 | 2007-10-31 |  | 7d |  |  |
| 833 | 8.8.2 | Bug fixing |  | 23d | 2007-10-01 | 2007-10-31 |  | 7d |  |  |

| ID | WBS | Task | Type | Duration | Start | Finish | Predecessors | Total slack | Constraint | Resources |
| --- | --- | --- | --- | --- | --- | --- | --- | --- | --- | --- |
| 834 | 8.9 | **Touchpoints** |  | 23d | 2007-10-01 | 2007-10-31 | 809 | 7d |  |  |
| 835 | 8.9.1 | Adopter review of deliverables |  | 23d | 2007-10-01 | 2007-10-31 |  | 7d |  |  |
| 836 | 8.9.2 | Adopter deployment of previous iteration codebase |  | 23d | 2007-10-01 | 2007-10-31 |  | 7d |  |  |
| 837 | 8.9.3 | Complete silver review |  | 23d | 2007-10-01 | 2007-10-31 |  | 7d |  |  |
| 838 | 8.10 | **Deliverables** |  | 23d | 2007-10-01 | 2007-10-31 | 809 | 7d |  |  |
| 839 | 8.10.1 | Risk matrix 1.4.x |  | 23d | 2007-10-01 | 2007-10-31 |  | 7d |  |  |
| 840 | 8.10.2 | Monthly report and risk matrix 1.3.x |  | 23d | 2007-10-01 | 2007-10-31 |  | 7d |  |  |
| 841 | 8.10.3 | Use case document (3.1.x) |  | 23d | 2007-10-01 | 2007-10-31 |  | 7d |  |  |
| 842 | 8.10.4 | Requirements document (3.2.x) |  | 23d | 2007-10-01 | 2007-10-31 |  | 7d |  |  |
| 843 | 8.10.5 | UML (3.3.x) |  | 23d | 2007-10-01 | 2007-10-31 |  | 7d |  |  |
| 844 | 8.10.6 | Design document (3.4.x) |  | 23d | 2007-10-01 | 2007-10-31 |  | 7d |  |  |
| 845 | 8.10.7 | Codebase (3.5.x) |  | 23d | 2007-10-01 | 2007-10-31 |  | 7d |  |  |
| 846 | 8.10.8 | Test plan (3.6.x, 5.4.x) |  | 23d | 2007-10-01 | 2007-10-31 |  | 7d |  |  |
| 847 | 8.10.9 | Test report (3.8.x) |  | 23d | 2007-10-01 | 2007-10-31 |  | 7d |  |  |
| 848 | 8.10.10 | Adopter test plan (5.5.x) |  | 23d | 2007-10-01 | 2007-10-31 |  | 7d |  |  |
| 849 | 8.10.11 | Adopter test report (5.6.x) |  | 23d | 2007-10-01 | 2007-10-31 |  | 7d |  |  |
| 850 | 8.10.12 | Installation guide (3.10.x) |  | 23d | 2007-10-01 | 2007-10-31 |  | 7d |  |  |
| 851 | 8.10.13 | Administration guide (3.13.x) |  | 23d | 2007-10-01 | 2007-10-31 |  | 7d |  |  |
| 852 | 8.10.14 | Release notes (3.14.x) |  | 23d | 2007-10-01 | 2007-10-31 |  | 7d |  |  |
| 853 | 8.10.15 | Adopter summary of C3PR (5.1.x) |  | 23d | 2007-10-01 | 2007-10-31 |  | 7d |  |  |
| 854 | 8.11 | **Demonstration** |  | 0d | 2007-11-12 | 2007-11-12 | 809 | 0d |  | Patrick; Ram; BAH |
| 855 | 8.11.1 | Demonstrate latest features to BAH | milestone | 0d | 2007-11-12 | 2007-11-12 | 809 | 0d | start no earlier than 2007-11-12 | Patrick; Ram; BAH |
| 856 | 8.11.2 | Demonstrate to the larger community | milestone | 0d | 2007-11-12 | 2007-11-12 | 809 | 0d | start no earlier than 2007-11-12 | Patrick; Ram; BAH |
